# Aplikacja BlatyRPG

How a schedule from MS Project XML changed from version to version. A marks actual dates.

## Version 1 (data date 2025-12-01, saved 2026-08-27, file BlatyRPG-Planner.v3.fixed.xml)

Note of the change: Merge: integrate campaign session module

| ID | WBS | Task | Duration | Start | Finish | Predecessors | Total float | Constraint |
| --- | --- | --- | --- | --- | --- | --- | --- | --- |
| 1 |  | START | 0d | 2025-12-01 | 2025-12-01 |  | 277.21d |  |
| 2 |  | KONIEC | 0d | 2026-07-29 | 2026-07-29 | 32 | 54.16d |  |
| 3 | 1 | **Kamienie Milowe** | 277.21d | 2025-12-01 | 2026-09-22 |  | 0d |  |
| 4 |  | KM: Kick-off projektu (start prac) | 0d | 2025-12-01 | 2025-12-01 | 1 | 277.21d | finish no earlier than 2025-12-01 |
| 5 |  | KM: Stack technologiczny wybrany i repozytorium przygotowane | 0d | 2025-12-12 | 2025-12-12 | 44 | 266.24d | finish no earlier than 2025-12-12 |
| 6 |  | KM: Środowisko DEV gotowe (Docker/CI) | 0d | 2026-01-07 | 2026-01-07 | 86 | 252.16d | finish no earlier than 2025-12-23 |
| 7 |  | KM: Koncepcja i backlog MVP zatwierdzone | 0d | 2026-01-07 | 2026-01-07 | 86 | 252.16d | finish no earlier than 2025-12-23 |
| 8 |  | KM: Architektura wstępna (HLD/ERD/API) zatwierdzona | 0d | 2025-12-24 | 2025-12-24 | 53 | 255.47d | finish no earlier than 2025-12-24 |
| 9 |  | KM: Bezpieczeństwo danych: walidacja + hasła (bcrypt) gotowe | 0d | 2026-02-01 | 2026-02-01 | 163 | 227.16d | finish no earlier than 2026-01-28 |
| 10 |  | KM: Zaproszenia do stołu gotowe | 0d | 2026-03-02 | 2026-03-02 | 189 | 198.43d | finish no earlier than 2026-03-02 |
| 11 |  | KM: Moduł Auth gotowy (rejestracja/logowanie) | 0d | 2026-06-02 | 2026-06-02 | 163, 262 | 111.68d | finish no earlier than 2026-06-02 |
| 12 |  | KM: Dashboard stołów/sesji gotowy | 0d | 2026-06-08 | 2026-06-08 | 181, 268 | 105.7d | finish no earlier than 2026-06-08 |
| 13 |  | KM: Wirtualny stół MVP gotowy | 0d | 2026-07-07 | 2026-07-07 | 189, 221, 231, 291 | 76.78d | finish no earlier than 2026-07-07 |
| 14 |  | KM: Ustawienia konta gotowe | 0d | 2026-07-10 | 2026-07-10 | 295 | 73.79d | finish no earlier than 2026-07-10 |
| 15 |  | KM: Profil użytkownika i role gotowe | 0d | 2026-07-13 | 2026-07-13 | 170, 296 | 70.8d | finish no earlier than 2026-07-13 |
| 16 |  | KM: Release Alpha udostępniony testerom | 0d | 2026-07-17 | 2026-07-17 | 301 | 66.81d | finish no earlier than 2026-07-17 |
| 17 |  | KM: Integracja audio/video gotowa (opcjonalnie) | 0d | 2026-07-20 | 2026-07-20 | 304 | 63.82d | finish no earlier than 2026-07-20 |
| 18 |  | KM: System makr i skryptów GM gotowy | 0d | 2026-07-22 | 2026-07-22 | 305, 306 | 61.02d | finish no earlier than 2026-07-22 |
| 19 |  | KM: Marketplace / framework pluginów gotowy (opcjonalnie) | 0d | 2026-07-23 | 2026-07-23 | 307 | 60.82d | finish no earlier than 2026-07-23 |
| 20 |  | KM: Panel administracyjny v1 gotowy | 0d | 2026-07-23 | 2026-07-23 | 247, 307 | 60.82d | finish no earlier than 2026-07-23 |
| 21 |  | KM: Testy unit+integration green (CI) | 0d | 2026-08-10 | 2026-08-10 | 316, 321 | 42.88d | finish no earlier than 2026-08-10 |
| 22 |  | KM: Testy E2E green (CI) | 0d | 2026-08-17 | 2026-08-17 | 327 | 35.9d | finish no earlier than 2026-08-17 |
| 23 |  | KM: Testy wydajności zakończone (baseline) | 0d | 2026-08-21 | 2026-08-21 | 332 | 31.91d | finish no earlier than 2026-08-21 |
| 24 |  | KM: UX/UI v1 zatwierdzone (Design freeze) | 0d | 2026-08-31 | 2026-08-31 | 339 | 21.94d | finish no earlier than 2026-08-31 |
| 25 |  | KM: Refaktoryzacja rdzenia zakończona | 0d | 2026-08-31 | 2026-08-31 | 339 | 21.94d | finish no earlier than 2026-08-31 |
| 26 |  | KM: Release Beta udostępniony testerom | 0d | 2026-09-08 | 2026-09-08 | 346 | 13.96d | finish no earlier than 2026-09-08 |
| 27 |  | KM: Release Candidate / wersja finalna gotowa | 0d | 2026-09-08 | 2026-09-08 | 339, 332, 327, 316, 346 | 13.96d | finish no earlier than 2026-09-08 |
| 28 |  | KM: Infrastruktura produkcyjna gotowa | 0d | 2026-09-10 | 2026-09-10 | 349 | 11.96d | finish no earlier than 2026-09-10 |
| 29 |  | KM: Monitoring i alerty skonfigurowane | 0d | 2026-09-15 | 2026-09-15 | 352 | 6.98d | finish no earlier than 2026-09-15 |
| 30 |  | KM: Go-live – wdrożenie na produkcję | 0d | 2026-09-22 | 2026-09-22 | 357 | 0d | finish no earlier than 2026-09-22 |
| 31 |  | KM: Przekazanie do utrzymania + DR/backup gotowe | 0d | 2026-07-29 | 2026-07-29 | 362 | 54.16d |  |
| 32 |  | KM: Zamknięcie projektu | 0d | 2026-07-29 | 2026-07-29 | 362 | 54.16d |  |
| 33 | 2 | **Etap koncepcyjny** | 25.05d | 2025-12-01 | 2026-01-07 |  | 55.16d |  |
| 34 | 2.1 | **Analiza i Wybór Technologii** | 2.13d | 2025-12-01 | 2025-12-03 |  | 55.16d |  |
| 35 |  | Analiza wymagań niefunkcjonalnych systemu | 1h | 2025-12-01 | 2025-12-01 |  | 55.16d |  |
| 36 |  | Porównanie frameworków JavaScript (React vs Vue vs Angular) | 30min | 2025-12-01 | 2025-12-01 | 35 | 55.16d |  |
| 37 |  | Decyzja: Wybór frameworka Front-End | 0d | 2025-12-01 | 2025-12-01 | 36 | 55.16d |  |
| 38 |  | Porównanie architektur Back-End (PHP/Laravel vs Node.js/Nest vs Python/Django) | 30min | 2025-12-01 | 2025-12-01 | 37 | 55.16d |  |
| 39 |  | Decyzja: Wybór frameworka Back-End | 0d | 2025-12-01 | 2025-12-01 | 38 | 55.16d |  |
| 40 |  | Analiza systemów baz danych (MySQL vs PostgreSQL vs MongoDB) | 30min | 2025-12-01 | 2025-12-01 | 39 | 55.16d |  |
| 41 |  | Decyzja: Wybór silnika bazy danych | 1d | 2025-12-01 | 2025-12-02 | 40 | 55.16d |  |
| 42 |  | Analiza protokołów Real-Time (WebSocket vs SSE vs Long Polling) | 10min | 2025-12-02 | 2025-12-02 | 41 | 55.16d |  |
| 43 |  | Decyzja: Wybór protokołu Real-Time | 0d | 2025-12-02 | 2025-12-02 | 42 | 55.16d |  |
| 44 |  | Projekt strategii konteneryzacji | 3h | 2025-12-02 | 2025-12-03 | 43 | 55.16d |  |
| 45 | 2.2 | **Projektowanie Architektury Systemu** | 3d | 2025-12-03 | 2025-12-06 |  | 55.16d |  |
| 46 |  | Opracowanie diagramu kontekstowego systemu (C4 Level 1) | 1d | 2025-12-03 | 2025-12-04 | 44 | 55.16d |  |
| 47 |  | Projekt architektury kontenerowej (C4 Level 2) | 1h | 2025-12-04 | 2025-12-04 | 46 | 55.16d |  |
| 48 |  | Definicja warstwy prezentacji (SPA/CSR) | 15min | 2025-12-04 | 2025-12-04 | 47 | 55.16d |  |
| 49 |  | Projekt API REST (OpenAPI/Swagger 3.0) | 1h | 2025-12-04 | 2025-12-04 | 48 | 55.16d |  |
| 50 |  | Projekt architektury WebSocket (Socket.io Rooms) | 5h | 2025-12-04 | 2025-12-05 | 49 | 55.16d |  |
| 51 |  | Projekt modułu uwierzytelniania (JWT Strategy) | 45min | 2025-12-05 | 2025-12-05 | 50 | 55.16d |  |
| 52 |  | Projekt logiki Wirtualnych Stołów (Game State Management) | 1h | 2025-12-05 | 2025-12-06 | 51 | 55.16d |  |
| 53 |  | Projekt systemu czatu (Message Broker Pattern) | 1h | 2025-12-06 | 2025-12-06 | 52 | 55.16d |  |
| 54 | 2.3 | **Modelowanie Danych** | 8.2d | 2025-12-06 | 2025-12-14 |  | 55.16d |  |
| 55 |  | Opracowanie diagramu ERD (Entity Relationship Diagram) | 1d | 2025-12-06 | 2025-12-07 | 53 | 55.16d |  |
| 56 |  | Projekt schematu: Tabela Users | 30min | 2025-12-07 | 2025-12-07 | 55 | 55.16d |  |
| 57 |  | Projekt schematu: Tabela Sessions (Kampanie) | 1h | 2025-12-07 | 2025-12-07 | 56 | 55.16d |  |
| 58 |  | Projekt schematu: Tabela Tables (Stoły/Blaty) | 2h | 2025-12-07 | 2025-12-08 | 57 | 55.16d |  |
| 59 |  | Projekt schematu: Tabela Maps | 3h | 2025-12-08 | 2025-12-08 | 58 | 55.16d |  |
| 60 |  | Projekt schematu: Tabela Tokens (Pionki) | 2h | 2025-12-08 | 2025-12-09 | 59 | 55.16d |  |
| 61 |  | Projekt schematu: Tabela Characters (Postacie) | 30min | 2025-12-09 | 2025-12-09 | 60 | 55.16d |  |
| 62 |  | Projekt schematu: Tabela Inventory (Ekwipunek) | 2h | 2025-12-09 | 2025-12-09 | 61 | 55.16d |  |
| 63 |  | Projekt schematu: Tabela Items (Przedmioty) | 2h | 2025-12-09 | 2025-12-09 | 62 | 55.16d |  |
| 64 |  | Projekt schematu: Tabela ChatMessages | 1h | 2025-12-09 | 2025-12-10 | 63 | 55.16d |  |
| 65 |  | Projekt schematu: Tabela DiceRolls (Historia rzutów) | 2h | 2025-12-10 | 2025-12-10 | 64 | 55.16d |  |
| 66 |  | Projekt schematu: Tabela Invitations (Zaproszenia) | 4h | 2025-12-10 | 2025-12-11 | 65 | 55.16d |  |
| 67 |  | Projekt schematu: Tabela Macros (Makra graczy) | 6h | 2025-12-11 | 2025-12-12 | 66 | 55.16d |  |
| 68 |  | Normalizacja bazy danych (3NF) | 1d | 2025-12-12 | 2025-12-13 | 67 | 55.16d |  |
| 69 |  | Projekt indeksów i constraintów | 1d | 2025-12-13 | 2025-12-14 | 68 | 55.16d |  |
| 70 | 2.4 | **Przygotowanie środowiska deweloperskiego** | 11.72d | 2025-12-14 | 2026-01-07 |  | 55.16d |  |

| ID | WBS | Task | Duration | Start | Finish | Predecessors | Complete | Total float |
| --- | --- | --- | --- | --- | --- | --- | --- | --- |
| 71 |  | Inicjalizacja repozytorium Git | 15min | 2025-12-14 | 2025-12-14 | 69 |  | 55.16d |
| 72 |  | Konfiguracja .gitignore | 15min | 2025-12-14 | 2025-12-14 | 71 |  | 55.16d |
| 73 |  | Ustalenie konwencji commitów (Conventional Commits) | 5min | 2025-12-14 | 2025-12-14 | 72 |  | 55.16d |
| 74 |  | Konfiguracja ESLint + Prettier (Frontend) | 1h | 2025-12-14 | 2025-12-14 | 73 |  | 55.16d |
| 75 |  | Konfiguracja PHP-CS-Fixer (Backend) | 2h | 2025-12-14 | 2025-12-15 | 74 |  | 55.16d |
| 76 |  | Setup Docker Compose (wersja multi-stage) | 1d | 2025-12-15 | 2025-12-16 | 75 |  | 55.16d |
| 77 |  | Konfiguracja kontenera MySQL | 1d | 2025-12-16 | 2025-12-17 | 76 |  | 55.16d |
| 78 |  | Konfiguracja kontenera PHP-FPM | 1d | 2025-12-17 | 2025-12-18 | 77 |  | 55.16d |
| 79 |  | Konfiguracja kontenera Node (Frontend) | 1d | 2025-12-18 | 2025-12-19 | 78 |  | 55.16d |
| 80 |  | Konfiguracja kontenera Node (WebSocket) | 1d | 2025-12-19 | 2025-12-20 | 79 |  | 55.16d |
| 81 |  | Konfiguracja kontenera Nginx | 1d | 2025-12-20 | 2025-12-21 | 80 |  | 55.16d |
| 82 |  | Konfiguracja GitHub Actions: Lint (Backend + Frontend) | 1d | 2025-12-21 | 2025-12-22 | 81 |  | 55.16d |
| 83 |  | Konfiguracja GitHub Actions: Testy (PHPUnit) | 1d | 2025-12-22 | 2026-01-04 | 82 |  | 55.16d |
| 84 |  | Konfiguracja GitHub Actions: Build Frontend | 1d | 2026-01-04 | 2026-01-05 | 83 |  | 55.16d |
| 85 |  | Setup zmiennych środowiskowych (.env) | 1d | 2026-01-05 | 2026-01-06 | 84 |  | 55.16d |
| 86 |  | Weryfikacja Health Check wszystkich kontenerów | 1d | 2026-01-06 | 2026-01-07 | 85 |  | 55.16d |
| 87 |  | Konfiguracja Monorepo (CI4 + Vue3) | 1d? | 2025-12-14 | 2025-12-15 |  |  |  |
| 88 |  | Dodanie lokalnej konfiguracji SSL (mkcert) i obszaru roboczego VS Code | 1d? | 2025-12-14 | 2025-12-15 |  |  |  |
| 89 |  | Repo (develop): Add Docker setup | 1d? | 2025-12-14 | 2025-12-15 |  |  |  |
| 90 | 3 | **Etap projektowania szczegółowego** | 198d? | 2026-01-07 A | 2026-07-29 |  |  | 54.16d |
| 91 | 3.1 | **Podstawowe funkcjonalności aplikacji** | 147d? | 2026-01-07 A | 2026-06-08 |  | 1% | 105.16d |
| 92 | 3.1.1 | **Infrastruktura Bazodanowa** | 14d? | 2026-01-07 | 2026-01-21 |  |  | 55.16d |
| 93 | 3.1.1.1 | **Implementacja systemu migracji (CodeIgniter Migrations)** | 12d? | 2026-01-07 | 2026-01-19 | 86 |  | 55.16d |
| 94 |  | Migracja 1: Tabela Users | 1d | 2026-01-07 | 2026-01-08 |  |  | 55.16d |
| 95 |  | Migracja 1: Tabela Sessions (Kampanie) | 1d | 2026-01-08 | 2026-01-09 | 94 |  | 55.16d |
| 96 |  | Migracja 1: Tabela Characters | 1d | 2026-01-12 | 2026-01-13 | 130 |  | 55.16d |
| 97 |  | Migracja 2: Tabela Rpg_systems | 1d | 2026-01-07 | 2026-01-08 |  |  | 251.16d |
| 98 |  | Migracja 2: Tabela Rpg_universes | 1d | 2026-01-07 | 2026-01-08 |  |  | 251.16d |
| 99 |  | Migracja 3: Tabela Rpg_system_universes (pivot) | 1d? | 2026-01-07 | 2026-01-08 |  |  | 251.16d |
| 100 |  | Migracja 2: Tabela Rpg_game_definitions | 1d | 2026-01-07 | 2026-01-08 |  |  | 251.16d |
| 101 |  | Migracja 4: Tabela Profession_equipment | 1d? | 2026-01-07 | 2026-01-08 |  |  | 251.16d |
| 102 |  | Migracja 4: Tabela Profession_path | 1d? | 2026-01-07 | 2026-01-08 |  |  | 251.16d |
| 103 |  | Migracja: Tabela Profession_definitions | 1d? | 2026-01-07 | 2026-01-08 |  |  | 251.16d |
| 104 |  | Migracja: Tabela Profession_attributes | 1d? | 2026-01-07 | 2026-01-08 |  |  | 251.16d |
| 105 |  | Migracja: Tabela Professions | 1d? | 2026-01-07 | 2026-01-08 |  |  | 251.16d |
| 106 |  | Migracja: Tabela Character_custom_unlocks | 1d? | 2026-01-07 | 2026-01-08 |  |  | 251.16d |
| 107 |  | Migracja: Tabela Character_attribute_advances | 1d? | 2026-01-07 | 2026-01-08 |  |  | 251.16d |
| 108 |  | Migracja: Tabela Character_professions | 1d? | 2026-01-07 | 2026-01-08 |  |  | 251.16d |
| 109 |  | Migracja: Tabela Magic_path_spells | 1d? | 2026-01-07 | 2026-01-08 |  |  | 251.16d |
| 110 |  | Migracja: Tabela Magic_paths | 1d? | 2026-01-07 | 2026-01-08 |  |  | 251.16d |
| 111 |  | Migracja: Tabela Item_bundle_items | 1d? | 2026-01-07 | 2026-01-08 |  |  | 251.16d |
| 112 |  | Migracja: Tabela Item_bundles | 1d? | 2026-01-07 | 2026-01-08 |  |  | 251.16d |
| 113 |  | Migracja: Tabela Items | 1d? | 2026-01-07 | 2026-01-08 |  |  | 251.16d |
| 114 |  | Migracja: Tabela Item_classes | 1d? | 2026-01-07 | 2026-01-08 |  |  | 251.16d |
| 115 |  | Migracja: Tabela Insanities | 1d? | 2026-01-07 | 2026-01-08 |  |  | 251.16d |
| 116 |  | Migracja: Tabela Weapon_traits | 1d? | 2026-01-07 | 2026-01-08 |  |  | 251.16d |
| 117 |  | Migracja: Tabela Combat_actions | 1d? | 2026-01-07 | 2026-01-08 |  |  | 251.16d |
| 118 | 5.1.1.1.25 | **Migracje: i18n (translations + locales)** | 1d? | 2026-01-07 | 2026-01-08 |  |  | 251.16d |
| 119 |  | Migracja: Tabela Magic_path_translations | 1d? | 2026-01-07 | 2026-01-08 |  |  | 251.16d |
| 120 |  | Migracja: Tabela Insanity_translations | 1d? | 2026-01-07 | 2026-01-08 |  |  | 251.16d |
| 121 |  | Migracja: Tabela Weapon_trait_translations | 1d? | 2026-01-07 | 2026-01-08 |  |  | 251.16d |
| 122 |  | Migracja: Tabela Combat_action_translations | 1d? | 2026-01-07 | 2026-01-08 |  |  | 251.16d |
| 123 |  | Migracja: Tabela Item_bundle_translations | 1d? | 2026-01-07 | 2026-01-08 |  |  | 251.16d |
| 124 |  | Migracja: Tabela Item_class_translations | 1d? | 2026-01-07 | 2026-01-08 |  |  | 251.16d |
| 125 |  | Migracja: Tabela Item_translations | 1d? | 2026-01-07 | 2026-01-08 |  |  | 251.16d |
| 126 |  | Migracja: Tabela Game_definition_translations | 1d? | 2026-01-07 | 2026-01-08 |  |  | 251.16d |
| 127 |  | Migracja: Tabela Locales | 1d? | 2026-01-07 | 2026-01-08 |  |  | 251.16d |
| 128 |  | Migracja: Tabela Tables (Stoły) | 1d | 2026-01-09 | 2026-01-10 | 95 |  | 55.16d |
| 129 |  | Migracja: Tabela Maps | 1d | 2026-01-10 | 2026-01-11 | 128 |  | 55.16d |
| 130 |  | Migracja: Tabela Tokens (Pionki) | 1d | 2026-01-11 | 2026-01-12 | 129 |  | 55.16d |
| 131 |  | Migracja: Tabela Inventory | 1d | 2026-01-13 | 2026-01-14 | 96 |  | 55.16d |
| 132 |  | Migracja: Tabela Items | 1d | 2026-01-14 | 2026-01-15 | 131 |  | 55.16d |
| 133 |  | Migracja: Tabela ChatMessages | 1d | 2026-01-15 | 2026-01-16 | 132 |  | 55.16d |
| 134 |  | Migracja: Tabela DiceRolls | 1d | 2026-01-16 | 2026-01-17 | 133 |  | 55.16d |
| 135 |  | Migracja: Tabela Invitations | 1d | 2026-01-17 | 2026-01-18 | 134 |  | 55.16d |
| 136 |  | Migracja: Tabela Macros | 1d | 2026-01-18 | 2026-01-19 | 135 |  | 55.16d |
| 137 | 3.1.1.14 | **Implementacja Seeders (dane legacy)** | 1d? | 2026-01-19 | 2026-01-20 | 136 |  | 55.16d |
| 138 |  | A_MasterSeeder | 1d? | 2026-01-19 | 2026-01-20 |  |  | 55.16d |
| 139 |  | Tabela Characters: CharacterLegacySeeder | 1d? | 2026-01-19 | 2026-01-20 |  |  | 55.16d |
| 140 |  | Tabela character_professions: CharacterProfessionsLegacySeeder | 1d? | 2026-01-19 | 2026-01-20 |  |  | 55.16d |

| ID | WBS | Task | Duration | Start | Finish | Predecessors | Total float |
| --- | --- | --- | --- | --- | --- | --- | --- |
| 141 |  | Tabela Professions: ProfessionsLegacySeeder | 1d? | 2026-01-19 | 2026-01-20 |  | 55.16d |
| 142 |  | LocalizationSeeder | 1d? | 2026-01-19 | 2026-01-20 |  | 55.16d |
| 143 |  | RpgInitializationSeeder | 1d? | 2026-01-19 | 2026-01-20 |  | 55.16d |
| 144 |  | WarhammerCombatSeeder | 1d? | 2026-01-19 | 2026-01-20 |  | 55.16d |
| 145 |  | WarhammerDefinitionsSeeder | 1d? | 2026-01-19 | 2026-01-20 |  | 55.16d |
| 146 |  | WarhammerEquipmentSeeder | 1d? | 2026-01-19 | 2026-01-20 |  | 55.16d |
| 147 |  | WarhammerInsanitySeeder | 1d? | 2026-01-19 | 2026-01-20 |  | 55.16d |
| 148 |  | Base/SystemBaseSeeder (abstrakcyjna klasa bazowa) | 1d? | 2026-01-19 | 2026-01-20 |  | 55.16d |
| 149 |  | Base/Coc7eBaseSeeder | 1d? | 2026-01-19 | 2026-01-20 |  | 55.16d |
| 150 |  | Base/WfrpBaseSeeder | 1d? | 2026-01-19 | 2026-01-20 |  | 55.16d |
| 151 |  | Testy migracji (rollback + migrate) | 1d | 2026-01-20 | 2026-01-21 | 137 | 55.16d |
| 152 | 3.1.2 | **Moduł Uwierzytelniania (Auth)** | 11d | 2026-01-21 | 2026-02-01 |  | 55.16d |
| 153 |  | Implementacja modelu User (Model ORM) | 1d | 2026-01-21 | 2026-01-22 | 151 | 55.16d |
| 154 |  | Implementacja biblioteki JWT (Firebase JWT) | 1d | 2026-01-22 | 2026-01-23 | 153 | 55.16d |
| 155 |  | Implementacja controllera AuthController | 1d | 2026-01-23 | 2026-01-24 | 154 | 55.16d |
| 156 |  | Endpoint: POST /api/auth/register | 1d | 2026-01-24 | 2026-01-25 | 155 | 55.16d |
| 157 |  | Endpoint: POST /api/auth/login | 1d | 2026-01-25 | 2026-01-26 | 156 | 55.16d |
| 158 |  | Endpoint: POST /api/auth/refresh | 1d | 2026-01-26 | 2026-01-27 | 157 | 55.16d |
| 159 |  | Endpoint: POST /api/auth/logout | 1d | 2026-01-27 | 2026-01-28 | 158 | 55.16d |
| 160 |  | Endpoint: POST /api/auth/reset-password | 1d | 2026-01-28 | 2026-01-29 | 159 | 55.16d |
| 161 |  | Implementacja middleware AuthMiddleware | 1d | 2026-01-29 | 2026-01-30 | 160 | 55.16d |
| 162 |  | Integracja SMTP (wysyłka maili) | 1d | 2026-01-30 | 2026-01-31 | 161 | 55.16d |
| 163 |  | Testy jednostkowe: AuthController | 1d | 2026-01-31 | 2026-02-01 | 162 | 55.16d |
| 164 | 3.1.3 | **Moduł Profilu Użytkownika** | 6d | 2026-02-01 | 2026-02-07 |  | 55.16d |
| 165 |  | Endpoint: GET /api/me | 1d | 2026-02-01 | 2026-02-02 | 163 | 55.16d |
| 166 |  | Endpoint: GET /api/profile/:id | 1d | 2026-02-02 | 2026-02-03 | 165 | 55.16d |
| 167 |  | Endpoint: PUT /api/profile | 1d | 2026-02-03 | 2026-02-04 | 166 | 55.16d |
| 168 |  | Endpoint: PUT /api/profile/password | 1d | 2026-02-04 | 2026-02-05 | 167 | 55.16d |
| 169 |  | Integracja Cloudinary (upload avatarów) | 1d | 2026-02-05 | 2026-02-06 | 168 | 55.16d |
| 170 |  | Endpoint: GET /api/cloudinary/resources | 1d | 2026-02-06 | 2026-02-07 | 169 | 55.16d |
| 171 | 3.1.4 | **Moduł Kampanii i Sesji** | 7d | 2026-02-07 | 2026-02-14 |  | 55.16d |
| 172 |  | Implementacja modelu Session | 1d | 2026-02-07 | 2026-02-08 | 170 | 55.16d |
| 173 |  | Endpoint: GET /api/campaigns | 1d | 2026-02-08 | 2026-02-09 | 172 | 55.16d |
| 174 |  | Endpoint: POST /api/campaigns | 1d | 2026-02-09 | 2026-02-10 | 173 | 55.16d |
| 175 |  | Endpoint: GET /api/campaigns/:id | 1d | 2026-02-10 | 2026-02-11 | 174 | 55.16d |
| 176 |  | Endpoint: PUT /api/campaigns/:id | 1d | 2026-02-11 | 2026-02-12 | 175 | 55.16d |
| 177 |  | Endpoint: DELETE /api/campaigns/:id | 1d | 2026-02-12 | 2026-02-13 | 176 | 55.16d |
| 178 |  | Testy jednostkowe: SessionModel | 1d | 2026-02-13 | 2026-02-14 | 177 | 55.16d |
| 179 | 3.1.5 | **Moduł Wirtualnych Stołów (Blaty)** | 10d | 2026-02-14 | 2026-02-24 |  | 55.16d |
| 180 |  | Implementacja modelu Table | 1d | 2026-02-14 | 2026-02-15 | 178 | 55.16d |
| 181 |  | Endpoint: GET /api/tables | 1d | 2026-02-15 | 2026-02-16 | 180 | 55.16d |
| 182 |  | Endpoint: POST /api/tables | 1d | 2026-02-16 | 2026-02-17 | 181 | 55.16d |
| 183 |  | Endpoint: GET /api/tables/:id | 1d | 2026-02-17 | 2026-02-18 | 182 | 55.16d |
| 184 |  | Endpoint: PUT /api/tables/:id | 1d | 2026-02-18 | 2026-02-19 | 183 | 55.16d |
| 185 |  | Endpoint: DELETE /api/tables/:id | 1d | 2026-02-19 | 2026-02-20 | 184 | 55.16d |
| 186 |  | Implementacja systemu zaproszeń do stołu | 1d | 2026-02-20 | 2026-02-21 | 185 | 55.16d |
| 187 |  | Endpoint: POST /api/tables/:id/invite | 1d | 2026-02-21 | 2026-02-22 | 186 | 55.16d |
| 188 |  | Endpoint: POST /api/tables/join | 1d | 2026-02-22 | 2026-02-23 | 187 | 55.16d |
| 189 |  | Wysyłka emaila z zaproszeniem (opcjonalne) | 1d | 2026-02-23 | 2026-02-24 | 188 | 55.16d |
| 190 | 3.1.6 | **Moduł Postaci (Characters)** | 8d | 2026-02-24 | 2026-03-04 |  | 55.16d |
| 191 |  | Implementacja modelu Character | 1d | 2026-02-24 | 2026-02-25 | 189 | 55.16d |
| 192 |  | Endpoint: GET /api/characters | 1d | 2026-02-25 | 2026-02-26 | 191 | 55.16d |
| 193 |  | Endpoint: POST /api/characters | 1d | 2026-02-26 | 2026-02-27 | 192 | 55.16d |
| 194 |  | Endpoint: GET /api/characters/:id | 1d | 2026-02-27 | 2026-02-28 | 193 | 55.16d |
| 195 |  | Endpoint: PUT /api/characters/:id | 1d | 2026-02-28 | 2026-03-01 | 194 | 55.16d |
| 196 |  | Endpoint: DELETE /api/characters/:id | 1d | 2026-03-01 | 2026-03-02 | 195 | 55.16d |
| 197 |  | System uprawnień do postaci (Permissions) | 1d | 2026-03-02 | 2026-03-03 | 196 | 55.16d |
| 198 |  | Endpoint: POST /api/characters/:id/permissions | 1d | 2026-03-03 | 2026-03-04 | 197 | 55.16d |
| 199 | 3.1.7 | **Moduł Ekwipunku i Przedmiotów** | 10d | 2026-03-04 | 2026-03-14 |  | 55.16d |
| 200 |  | Implementacja modelu Item | 1d | 2026-03-04 | 2026-03-05 | 198 | 55.16d |
| 201 |  | Implementacja modelu Inventory | 1d | 2026-03-05 | 2026-03-06 | 200 | 55.16d |
| 202 |  | Endpoint: GET /api/characters/:id/inventory | 1d | 2026-03-06 | 2026-03-07 | 201 | 55.16d |
| 203 |  | Endpoint: POST /api/characters/:id/inventory | 1d | 2026-03-07 | 2026-03-08 | 202 | 55.16d |
| 204 |  | Endpoint: PUT /api/inventory/:id | 1d | 2026-03-08 | 2026-03-09 | 203 | 55.16d |
| 205 |  | Endpoint: DELETE /api/inventory/:id | 1d | 2026-03-09 | 2026-03-10 | 204 | 55.16d |
| 206 |  | System handlu/wymiany (Trading) | 1d | 2026-03-10 | 2026-03-11 | 205 | 55.16d |
| 207 |  | Endpoint: POST /api/trade/offer | 1d | 2026-03-11 | 2026-03-12 | 206 | 55.16d |
| 208 |  | Endpoint: POST /api/trade/accept | 1d | 2026-03-12 | 2026-03-13 | 207 | 55.16d |
| 209 |  | Kosz przedmiotów (Soft Delete) | 1d | 2026-03-13 | 2026-03-14 | 208 | 55.16d |
| 210 | 3.1.8 | **Moduł Map i Tokenów (VTT Core)** | 11d | 2026-03-14 | 2026-03-25 |  | 55.16d |

| ID | WBS | Task | Duration | Start | Finish | Predecessors | Complete | Total float |
| --- | --- | --- | --- | --- | --- | --- | --- | --- |
| 211 |  | Implementacja modelu Map | 1d | 2026-03-14 | 2026-03-15 | 209 |  | 55.16d |
| 212 |  | Endpoint: POST /api/maps | 1d | 2026-03-15 | 2026-03-16 | 211 |  | 55.16d |
| 213 |  | Endpoint: GET /api/maps/:id | 1d | 2026-03-16 | 2026-03-17 | 212 |  | 55.16d |
| 214 |  | Endpoint: PUT /api/maps/:id | 1d | 2026-03-17 | 2026-03-18 | 213 |  | 55.16d |
| 215 |  | Endpoint: DELETE /api/maps/:id | 1d | 2026-03-18 | 2026-03-19 | 214 |  | 55.16d |
| 216 |  | Implementacja modelu Token | 1d | 2026-03-19 | 2026-03-20 | 215 |  | 55.16d |
| 217 |  | Endpoint: POST /api/tokens | 1d | 2026-03-20 | 2026-03-21 | 216 |  | 55.16d |
| 218 |  | Endpoint: PUT /api/tokens/:id | 1d | 2026-03-21 | 2026-03-22 | 217 |  | 55.16d |
| 219 |  | Endpoint: DELETE /api/tokens/:id | 1d | 2026-03-22 | 2026-03-23 | 218 |  | 55.16d |
| 220 |  | System Fog of War (backend state) | 1d | 2026-03-23 | 2026-03-24 | 219 |  | 55.16d |
| 221 |  | Endpoint: PUT /api/maps/:id/fog | 1d | 2026-03-24 | 2026-03-25 | 220 |  | 55.16d |
| 222 | 3.1.9 | **Moduł Czatu (Real-Time Messaging)** | 9d | 2026-03-25 | 2026-04-08 |  |  | 55.16d |
| 223 |  | Implementacja modelu ChatMessage | 1d | 2026-03-25 | 2026-03-26 | 221 |  | 55.16d |
| 224 |  | Endpoint: GET /api/tables/:id/messages | 1d | 2026-03-26 | 2026-03-27 | 223 |  | 55.16d |
| 225 |  | Endpoint: POST /api/tables/:id/messages | 1d | 2026-03-27 | 2026-03-28 | 224 |  | 55.16d |
| 226 |  | Implementacja serwera WebSocket (Socket.io) | 1d | 2026-03-28 | 2026-03-29 | 225 |  | 55.16d |
| 227 |  | WebSocket Event: join_table | 1d | 2026-03-29 | 2026-03-30 | 226 |  | 55.16d |
| 228 |  | WebSocket Event: chat_message | 1d | 2026-03-30 | 2026-03-31 | 227 |  | 55.16d |
| 229 |  | WebSocket Event: private_message | 1d | 2026-03-31 | 2026-04-01 | 228 |  | 55.16d |
| 230 |  | Middleware WebSocket: JWT Authentication | 1d | 2026-04-01 | 2026-04-02 | 229 |  | 55.16d |
| 231 |  | Buffer wiadomości (ostatnie 500 per stół) | 1d | 2026-04-02 | 2026-04-08 | 230 |  | 55.16d |
| 232 | 3.1.10 | **Moduł Rzutów Kośćmi (Dice Roller)** | 9d | 2026-04-08 | 2026-04-17 |  |  | 55.16d |
| 233 |  | Implementacja modelu DiceRoll | 1d | 2026-04-08 | 2026-04-09 | 231 |  | 55.16d |
| 234 |  | Biblioteka parsowania formuł dice | 1d | 2026-04-09 | 2026-04-10 | 233 |  | 55.16d |
| 235 |  | Endpoint: POST /api/dice/roll | 1d | 2026-04-10 | 2026-04-11 | 234 |  | 55.16d |
| 236 |  | Endpoint: GET /api/tables/:id/rolls | 1d | 2026-04-11 | 2026-04-12 | 235 |  | 55.16d |
| 237 |  | WebSocket Event: dice_roll | 1d | 2026-04-12 | 2026-04-13 | 236 |  | 55.16d |
| 238 |  | Implementacja rzutów zaawansowanych (przewaga/utrudnienie D&D 5e) | 1d | 2026-04-13 | 2026-04-14 | 237 |  | 55.16d |
| 239 |  | System makr rzutów | 1d | 2026-04-14 | 2026-04-15 | 238 |  | 55.16d |
| 240 |  | Endpoint: GET /api/macros | 1d | 2026-04-15 | 2026-04-16 | 239 |  | 55.16d |
| 241 |  | Endpoint: POST /api/macros/:id/execute | 1d | 2026-04-16 | 2026-04-17 | 240 |  | 55.16d |
| 242 | 3.1.11 | **Moduł Panelu Admina** | 5d | 2026-04-17 | 2026-04-22 |  |  | 55.16d |
| 243 |  | Endpoint: GET /api/admin/stats | 1d | 2026-04-17 | 2026-04-18 | 241 |  | 55.16d |
| 244 |  | Endpoint: GET /api/admin/users | 1d | 2026-04-18 | 2026-04-19 | 243 |  | 55.16d |
| 245 |  | Endpoint: PUT /api/admin/users/:id | 1d | 2026-04-19 | 2026-04-20 | 244 |  | 55.16d |
| 246 |  | Endpoint: DELETE /api/admin/users/:id | 1d | 2026-04-20 | 2026-04-21 | 245 |  | 55.16d |
| 247 |  | Middleware: AdminMiddleware | 1d | 2026-04-21 | 2026-04-22 | 246 |  | 55.16d |
| 248 | 3.1.12 | **Warstwa Front-End: Struktura Aplikacji** | 7d | 2026-04-22 | 2026-04-29 |  |  | 55.16d |
| 249 |  | Inicjalizacja projektu Vue 3 (webpack) | 1d | 2026-04-22 | 2026-04-23 | 247 |  | 55.16d |
| 250 |  | Instalacja zależności: Vue Router | 1d | 2026-04-23 | 2026-04-24 | 249 |  | 55.16d |
| 251 |  | Instalacja zależności: Vuex (State Management) | 1d | 2026-04-24 | 2026-04-25 | 250 |  | 55.16d |
| 252 |  | Instalacja zależności: Axios (HTTP Client) | 1d | 2026-04-25 | 2026-04-26 | 251 |  | 55.16d |
| 253 |  | Client | 1d | 2026-04-26 | 2026-04-27 | 252 |  | 55.16d |
| 254 |  | Konfiguracja Vite Proxy (dev server) | 1d | 2026-04-27 | 2026-04-28 | 253 |  | 55.16d |
| 255 |  | Struktura katalogów projektu | 1d | 2026-04-28 | 2026-04-29 | 254 |  | 55.16d |
| 256 | 3.1.13 | **Front-End: Moduł Uwierzytelniania (UI)** | 6d | 2026-04-29 | 2026-05-05 |  |  | 55.16d |
| 257 |  | Komponent: LoginPage.vue | 1d | 2026-04-29 | 2026-04-30 | 255 |  | 55.16d |
| 258 |  | Komponent: RegisterPage.vue | 1d | 2026-04-30 | 2026-05-01 | 257 |  | 55.16d |
| 259 |  | Komponent: ResetPasswordPage.vue | 1d | 2026-05-01 | 2026-05-02 | 258 |  | 55.16d |
| 260 |  | Store Vuex: authStore | 1d | 2026-05-02 | 2026-05-03 | 259 |  | 55.16d |
| 261 |  | Axios Interceptor: JWT Auto-refresh | 1d | 2026-05-03 | 2026-05-04 | 260 |  | 55.16d |
| 262 |  | Router Guard: requireAuth | 1d | 2026-05-04 | 2026-05-05 | 261 |  | 55.16d |
| 263 | 3.1.14 | **Front-End: Dashboard i Nawigacja** | 7d | 2026-05-05 A | 2026-05-12 |  | 14% | 54.16d |
| 264 |  | Komponent: HomeView.vue | 1d | 2026-05-06 A | 2026-05-07 A | 262 | 100% |  |
| 265 |  | Komponent: AppLayout.vue | 1d | 2026-05-05 | 2026-05-06 | 262 |  | 55.16d |
| 266 |  | Komponent: Navbar.vue | 1d | 2026-05-07 | 2026-05-08 | 265, 264 |  | 54.16d |
| 267 |  | Komponent: Sidebar.vue | 1d | 2026-05-08 | 2026-05-09 | 266 |  | 54.16d |
| 268 |  | Strona: DashboardPage.vue | 1d | 2026-05-09 | 2026-05-10 | 267 |  | 54.16d |
| 269 |  | Strona 404 | 1d | 2026-05-10 | 2026-05-11 | 268 |  | 54.16d |
| 270 |  | Strona 403 | 1d | 2026-05-11 | 2026-05-12 | 269 |  | 54.16d |
| 271 | 3.1.15 | **Front-End: Moduł Kampanii** | 5d | 2026-05-12 | 2026-05-17 |  |  | 54.16d |
| 272 |  | Strona: CampaignsListPage.vue | 1d | 2026-05-12 | 2026-05-13 | 270 |  | 54.16d |
| 273 |  | Komponent: CampaignCard.vue | 1d | 2026-05-13 | 2026-05-14 | 272 |  | 54.16d |
| 274 |  | Strona: CampaignCreatePage.vue | 1d | 2026-05-14 | 2026-05-15 | 273 |  | 54.16d |
| 275 |  | Strona: CampaignDetailsPage.vue | 1d | 2026-05-15 | 2026-05-16 | 274 |  | 54.16d |
| 276 |  | Store Vuex: campaignsStore | 1d | 2026-05-16 | 2026-05-17 | 275 |  | 54.16d |
| 277 | 3.1.16 | **Front-End: Moduł Wirtualnego Stołu (VTT UI)** | 14d | 2026-05-17 | 2026-05-31 |  |  | 54.16d |
| 278 |  | Strona: TableRoomPage.vue | 1d | 2026-05-17 | 2026-05-18 | 276 |  | 54.16d |
| 279 |  | Komponent: MapCanvas.vue | 1d | 2026-05-18 | 2026-05-19 | 278 |  | 54.16d |
| 280 |  | Komponent: TokenLayer.vue | 1d | 2026-05-19 | 2026-05-20 | 279 |  | 54.16d |

| ID | WBS | Task | Duration | Start | Finish | Predecessors | Total float |
| --- | --- | --- | --- | --- | --- | --- | --- |
| 281 |  | Komponent: GridLayer.vue | 1d | 2026-05-20 | 2026-05-21 | 280 | 54.16d |
| 282 |  | Komponent: FogOfWarLayer.vue | 1d | 2026-05-21 | 2026-05-22 | 281 | 54.16d |
| 283 |  | Komponent: DrawingToolbar.vue | 1d | 2026-05-22 | 2026-05-23 | 282 | 54.16d |
| 284 |  | Komponent: Sidebar.vue (w grze) | 1d | 2026-05-23 | 2026-05-24 | 283 | 54.16d |
| 285 |  | Komponent: ChatPanel.vue | 1d | 2026-05-24 | 2026-05-25 | 284 | 54.16d |
| 286 |  | Komponent: DiceRollerWidget.vue | 1d | 2026-05-25 | 2026-05-26 | 285 | 54.16d |
| 287 |  | Komponent: CharacterSheetModal.vue | 1d | 2026-05-26 | 2026-05-27 | 286 | 54.16d |
| 288 |  | Komponent: InventoryPanel.vue | 1d | 2026-05-27 | 2026-05-28 | 287 | 54.16d |
| 289 |  | Komponent: InitiativeTracker.vue | 1d | 2026-05-28 | 2026-05-29 | 288 | 54.16d |
| 290 |  | Store Vuex: gameStore | 1d | 2026-05-29 | 2026-05-30 | 289 | 54.16d |
| 291 |  | WebSocket Service: Integration | 1d | 2026-05-30 | 2026-05-31 | 290 | 54.16d |
| 292 | 3.1.17 | **Front-End: Moduł Profilu** | 4d | 2026-05-31 | 2026-06-04 |  | 54.16d |
| 293 |  | Strona: ProfilePage.vue | 1d | 2026-05-31 | 2026-06-01 | 291 | 54.16d |
| 294 |  | Komponent: AvatarUpload.vue | 1d | 2026-06-01 | 2026-06-02 | 293 | 54.16d |
| 295 |  | Strona: SettingsPage.vue | 1d | 2026-06-02 | 2026-06-03 | 294 | 54.16d |
| 296 |  | Store Vuex: userStore | 1d | 2026-06-03 | 2026-06-04 | 295 | 54.16d |
| 297 | 3.1.18 | **Lokalizacja i i18n** | 4d | 2026-06-04 | 2026-06-08 |  | 54.16d |
| 298 |  | Instalacja biblioteki Vue I18n | 1d | 2026-06-04 | 2026-06-05 | 296 | 54.16d |
| 299 |  | pl.json | 1d | 2026-06-05 | 2026-06-06 | 298 | 54.16d |
| 300 |  | Endpoint: GET /api/i18n/:lang | 1d | 2026-06-06 | 2026-06-07 | 299 | 54.16d |
| 301 |  | Selector języka w Navbar | 1d | 2026-06-07 | 2026-06-08 | 300 | 54.16d |
| 302 | 3.2 | **Zaawansowane funkcjonalności aplikacji** | 4d | 2026-06-08 | 2026-06-12 |  | 54.16d |
| 303 | 3.2.1 | **Front-End: Moduł Zaawansowany (Opcjonalny)** | 4d | 2026-06-08 | 2026-06-12 |  | 54.16d |
| 304 |  | (Jitsi Embed) | 1d | 2026-06-08 | 2026-06-09 | 301 | 54.16d |
| 305 |  | Strona: MacrosPage.vue | 1d | 2026-06-09 | 2026-06-10 | 304 | 54.16d |
| 306 |  | Komponent: MacroEditor.vue | 1d | 2026-06-10 | 2026-06-11 | 305 | 54.16d |
| 307 |  | Strona: AdminPanel.vue | 1d | 2026-06-11 | 2026-06-12 | 306 | 54.16d |
| 308 |  | Etap testów i wdrożenia | 1d | 2026-06-12 | 2026-06-13 | 307 | 54.16d |
| 309 | 3.4 | **Testy Jednostkowe Backend** | 7d | 2026-06-13 | 2026-06-20 |  | 54.16d |
| 310 |  | Setup PHPUnit w projekcie | 1d | 2026-06-13 | 2026-06-14 | 308 | 54.16d |
| 311 |  | Testy: AuthController | 1d | 2026-06-14 | 2026-06-15 | 310 | 54.16d |
| 312 |  | Testy: CampaignsController | 1d | 2026-06-15 | 2026-06-16 | 311 | 54.16d |
| 313 |  | Testy: TablesController | 1d | 2026-06-16 | 2026-06-17 | 312 | 54.16d |
| 314 |  | Testy: CharactersController | 1d | 2026-06-17 | 2026-06-18 | 313 | 54.16d |
| 315 |  | Testy: DiceRoller Service | 1d | 2026-06-18 | 2026-06-19 | 314 | 54.16d |
| 316 |  | Raport coverage PHPUnit | 1d | 2026-06-19 | 2026-06-20 | 315 | 54.16d |
| 317 | 3.5 | **Testy Jednostkowe Frontend** | 4d | 2026-06-20 | 2026-06-24 |  | 54.16d |
| 318 |  | Setup Vitest w projekcie | 1d | 2026-06-20 | 2026-06-21 | 316 | 54.16d |
| 319 |  | Testy: authStore | 1d | 2026-06-21 | 2026-06-22 | 318 | 54.16d |
| 320 |  | Testy: componenty Vue (przykładowe) | 1d | 2026-06-22 | 2026-06-23 | 319 | 54.16d |
| 321 |  | Testy: WebSocket Service | 1d | 2026-06-23 | 2026-06-24 | 320 | 54.16d |
| 322 | 3.6 | **Testy E2E (End-to-End)** | 5d | 2026-06-24 | 2026-06-29 |  | 54.16d |
| 323 |  | Setup Cypress w projekcie | 1d | 2026-06-24 | 2026-06-25 | 321 | 54.16d |
| 324 |  | Test E2E: User Registration Flow | 1d | 2026-06-25 | 2026-06-26 | 323 | 54.16d |
| 325 |  | Test E2E: Login → Create Campaign → Join Table | 1d | 2026-06-26 | 2026-06-27 | 324 | 54.16d |
| 326 |  | Test E2E: Dice Roll w grze | 1d | 2026-06-27 | 2026-06-28 | 325 | 54.16d |
| 327 |  | Test E2E: Chat Real-Time | 1d | 2026-06-28 | 2026-06-29 | 326 | 54.16d |
| 328 | 3.7 | **Testy Wydajnościowe** | 4d | 2026-06-29 | 2026-07-03 |  | 54.16d |
| 329 |  | Setup narzędzia k6 lub Apache JMeter | 1d | 2026-06-29 | 2026-06-30 | 327 | 54.16d |
| 330 |  | Test: 50 równoczesnych połączeń WebSocket | 1d | 2026-06-30 | 2026-07-01 | 329 | 54.16d |
| 331 |  | Test: API Throughput (requests/sec) | 1d | 2026-07-01 | 2026-07-02 | 330 | 54.16d |
| 332 |  | Analiza wyników i optymalizacja | 1d | 2026-07-02 | 2026-07-03 | 331 | 54.16d |
| 333 | 3.8 | **Optymalizacja i Refactoring** | 6d | 2026-07-03 | 2026-07-09 |  | 54.16d |
| 334 |  | Code Review: Backend | 1d | 2026-07-03 | 2026-07-04 | 332 | 54.16d |
| 335 |  | Code Review: Frontend | 1d | 2026-07-04 | 2026-07-05 | 334 | 54.16d |
| 336 |  | Refactoring: usunięcie dead code | 1d | 2026-07-05 | 2026-07-06 | 335 | 54.16d |
| 337 |  | Optymalizacja zapytań SQL | 1d | 2026-07-06 | 2026-07-07 | 336 | 54.16d |
| 338 |  | Lazy Loading komponentów Vue | 1d | 2026-07-07 | 2026-07-08 | 337 | 54.16d |
| 339 |  | Optymalizacja obrazów (Cloudinary) | 1d | 2026-07-08 | 2026-07-09 | 338 | 54.16d |
| 340 | 3.9 | **Przygotowanie Wersji Beta** | 6d | 2026-07-09 | 2026-07-15 |  | 54.16d |
| 341 |  | Konfiguracja serwera staging (beta.blatyrpg.pl) | 1d | 2026-07-09 | 2026-07-10 | 339 | 54.16d |
| 342 |  | Setup Nginx na produkcji | 1d | 2026-07-10 | 2026-07-11 | 341 | 54.16d |
| 343 |  | Setup CI/CD: Auto-deploy do staging | 1d | 2026-07-11 | 2026-07-12 | 342 | 54.16d |
| 344 |  | Migracja bazy danych na staging | 1d | 2026-07-12 | 2026-07-13 | 343 | 54.16d |
| 345 |  | Testy akceptacyjne z użytkownikami (UAT) | 1d | 2026-07-13 | 2026-07-14 | 344 | 54.16d |
| 346 |  | Bug fixing na podstawie feedbacku | 1d | 2026-07-14 | 2026-07-15 | 345 | 54.16d |
| 347 | 3.10 | **Wdrożenie Produkcyjne** | 10d | 2026-07-15 | 2026-07-25 |  | 54.16d |
| 348 |  | Konfiguracja domeny produkcyjnej (blatyrpg.pl) | 1d | 2026-07-15 | 2026-07-16 | 346 | 54.16d |
| 349 |  | Setup serwera produkcyjnego | 1d | 2026-07-16 | 2026-07-17 | 348 | 54.16d |
| 350 |  | Konfiguracja Backupów bazy danych | 1d | 2026-07-17 | 2026-07-18 | 349 | 54.16d |

| ID | WBS | Task | Duration | Start | Finish | Predecessors | Total float |
| --- | --- | --- | --- | --- | --- | --- | --- |
| 351 |  | Setup Monitoring: Sentry (error tracking) | 1d | 2026-07-18 | 2026-07-19 | 350 | 54.16d |
| 352 |  | Setup Monitoring: Grafana + Prometheus | 1d | 2026-07-19 | 2026-07-20 | 351 | 54.16d |
| 353 |  | Setup Logowania: ELK Stack (opcjonalnie) | 1d | 2026-07-20 | 2026-07-21 | 352 | 54.16d |
| 354 |  | Konfiguracja CDN (Cloudflare) | 1d | 2026-07-21 | 2026-07-22 | 353 | 54.16d |
| 355 |  | Migracja danych z staging na produkcję | 1d | 2026-07-22 | 2026-07-23 | 354 | 54.16d |
| 356 |  | Deploy aplikacji na produkcję | 1d | 2026-07-23 | 2026-07-24 | 355 | 54.16d |
| 357 |  | Smoke Tests po wdrożeniu | 1d | 2026-07-24 | 2026-07-25 | 356 | 54.16d |
| 358 | 3.11 | **Utrzymanie i Maintenance** | 4d | 2026-07-25 | 2026-07-29 |  | 54.16d |
| 359 |  | Plan Disaster Recovery | 1d | 2026-07-25 | 2026-07-26 | 357 | 54.16d |
| 360 |  | Harmonogram aktualizacji zależności | 1d | 2026-07-26 | 2026-07-27 | 359 | 54.16d |
| 361 |  | Monitoring wydajności i kosztów | 1d | 2026-07-27 | 2026-07-28 | 360 | 54.16d |
| 362 |  | Feedback Loop z użytkownikami | 1d | 2026-07-28 | 2026-07-29 | 361 | 54.16d |

## Version 2 (data date 2026-08-26, saved 2026-08-26, file BlatyRPG-Planner.v3.status-2026-08-26.xml)

Note of the change: Merge: integrate campaign session module

Last finish 2026-09-22 → 2027-05-08 (+228d). Complete tasks 1 → 215.

Changed:

| ID | Task | Start | Finish | Duration | Complete | Total float | Other |
| --- | --- | --- | --- | --- | --- | --- | --- |
| 1 | START | 2025-12-01 A | 2025-12-01 A |  | 0% → 100% | 277.21d → none | baseline start none → 2025-12-01; baseline finish none → 2025-12-01 |
| 2 | KONIEC | 2026-07-29 → 2027-05-08 (+283d) | 2026-07-29 → 2027-05-08 (+283d) |  |  | 54.16d → 0d | baseline start none → 2026-07-29; baseline finish none → 2026-07-29 |
| 3 | **Kamienie Milowe** | 2025-12-01 A | 2026-09-22 → 2027-05-08 (+228d) | 277.21d → 505.4d | 0% → 45% |  | baseline start none → 2025-12-01; baseline finish none → 2026-09-22 |
| 4 | KM: Kick-off projektu (start prac) | 2025-12-01 A | 2025-12-01 A |  | 0% → 100% | 277.21d → none | constraint finish no earlier than 2025-12-01 → none; baseline start none → 2025-12-01; baseline finish none → 2025-12-01 |
| 5 | KM: Stack technologiczny wybrany i repozytorium przygotowane | 2025-12-12 → 2025-12-04 A (-8d) | 2025-12-12 → 2025-12-04 A (-8d) |  | 0% → 100% | 266.24d → none | constraint finish no earlier than 2025-12-12 → none; baseline start none → 2025-12-12; baseline finish none → 2025-12-12 |
| 6 | KM: Środowisko DEV gotowe (Docker/CI) | 2026-01-07 → 2025-12-05 A (-33d) | 2026-01-07 → 2026-09-19 (+255d) |  | 0% → 70% | 252.16d → 0d | constraint finish no earlier than 2025-12-23 → none; baseline start none → 2026-01-07; baseline finish none → 2026-01-07 |
| 7 | KM: Koncepcja i backlog MVP zatwierdzone | 2026-01-07 → 2026-08-19 A (+224d) | 2026-01-07 → 2026-08-19 A (+224d) |  | 0% → 100% | 252.16d → none | constraint finish no earlier than 2025-12-23 → none; baseline start none → 2026-01-07; baseline finish none → 2026-01-07 |
| 8 | KM: Architektura wstępna (HLD/ERD/API) zatwierdzona | 2025-12-24 → 2026-08-19 A (+238d) | 2025-12-24 → 2026-09-06 (+256d) |  | 0% → 70% | 255.47d → 0d | constraint finish no earlier than 2025-12-24 → none; baseline start none → 2025-12-24; baseline finish none → 2025-12-24 |
| 9 | KM: Bezpieczeństwo danych: walidacja + hasła (bcrypt) gotowe | 2026-02-01 → 2026-08-19 A (+199d) | 2026-02-01 → 2026-08-19 A (+199d) |  | 0% → 100% | 227.16d → none | constraint finish no earlier than 2026-01-28 → none; baseline start none → 2026-02-01; baseline finish none → 2026-02-01 |
| 10 | KM: Zaproszenia do stołu gotowe | 2026-03-02 → 2026-08-19 A (+170d) | 2026-03-02 → 2026-08-19 A (+170d) |  | 0% → 100% | 198.43d → none | constraint finish no earlier than 2026-03-02 → none; baseline start none → 2026-03-02; baseline finish none → 2026-03-02 |
| 11 | KM: Moduł Auth gotowy (rejestracja/logowanie) | 2026-06-02 → 2026-08-19 A (+78d) | 2026-06-02 → 2026-08-19 A (+78d) |  | 0% → 100% | 111.68d → none | constraint finish no earlier than 2026-06-02 → none; baseline start none → 2026-06-02; baseline finish none → 2026-06-02 |
| 12 | KM: Dashboard stołów/sesji gotowy | 2026-06-08 → 2026-08-19 A (+72d) | 2026-06-08 → 2026-08-19 A (+72d) |  | 0% → 100% | 105.7d → none | constraint finish no earlier than 2026-06-08 → none; baseline start none → 2026-06-08; baseline finish none → 2026-06-08 |
| 13 | KM: Wirtualny stół MVP gotowy | 2026-07-07 → 2026-08-19 A (+43d) | 2026-07-07 → 2026-11-03 (+119d) |  | 0% → 75% | 76.78d → 0d | constraint finish no earlier than 2026-07-07 → none; baseline start none → 2026-07-07; baseline finish none → 2026-07-07 |
| 14 | KM: Ustawienia konta gotowe | 2026-07-10 → 2026-08-23 A (+44d) | 2026-07-10 → 2026-08-23 A (+44d) |  | 0% → 100% | 73.79d → none | constraint finish no earlier than 2026-07-10 → none; baseline start none → 2026-07-10; baseline finish none → 2026-07-10 |
| 15 | KM: Profil użytkownika i role gotowe | 2026-07-13 → 2026-08-23 A (+41d) | 2026-07-13 → 2026-10-05 (+84d) |  | 0% → 90% | 70.8d → 0d | constraint finish no earlier than 2026-07-13 → none; baseline start none → 2026-07-13; baseline finish none → 2026-07-13 |
| 16 | KM: Release Alpha udostępniony testerom | 2026-07-17 → 2026-11-03 (+109d) | 2026-07-17 → 2026-11-03 (+109d) |  |  | 66.81d → 0d | constraint finish no earlier than 2026-07-17 → none; baseline start none → 2026-07-17; baseline finish none → 2026-07-17 |
| 17 | KM: Integracja audio/video gotowa (opcjonalnie) | 2026-07-20 → 2026-12-17 (+150d) | 2026-07-20 → 2026-12-17 (+150d) |  |  | 63.82d → 0d | constraint finish no earlier than 2026-07-20 → none; baseline start none → 2026-07-20; baseline finish none → 2026-07-20 |
| 18 | KM: System makr i skryptów GM gotowy | 2026-07-22 → 2026-12-27 (+158d) | 2026-07-22 → 2026-12-27 (+158d) |  |  | 61.02d → 0d | constraint finish no earlier than 2026-07-22 → none; baseline start none → 2026-07-22; baseline finish none → 2026-07-22 |
| 19 | KM: Marketplace / framework pluginów gotowy (opcjonalnie) | 2026-07-23 → 2027-05-08 (+289d) | 2026-07-23 → 2027-05-08 (+289d) |  |  | 60.82d → 0d | constraint finish no earlier than 2026-07-23 → none; baseline start none → 2026-07-23; baseline finish none → 2026-07-23 |
| 20 | KM: Panel administracyjny v1 gotowy | 2026-07-23 → 2026-08-23 A (+31d) | 2026-07-23 → 2026-08-23 A (+31d) |  | 0% → 100% | 60.82d → none | constraint finish no earlier than 2026-07-23 → none; baseline start none → 2026-07-23; baseline finish none → 2026-07-23 |
| 21 | KM: Testy unit+integration green (CI) | 2026-08-10 → 2026-08-26 A (+16d) | 2026-08-10 → 2027-01-01 (+144d) |  | 0% → 90% | 42.88d → 0d | constraint finish no earlier than 2026-08-10 → none; baseline start none → 2026-08-10; baseline finish none → 2026-08-10 |
| 22 | KM: Testy E2E green (CI) | 2026-08-17 → 2027-01-17 (+153d) | 2026-08-17 → 2027-01-17 (+153d) |  |  | 35.9d → 0d | constraint finish no earlier than 2026-08-17 → none; baseline start none → 2026-08-17; baseline finish none → 2026-08-17 |
| 23 | KM: Testy wydajności zakończone (baseline) | 2026-08-21 → 2027-01-29 (+161d) | 2026-08-21 → 2027-01-29 (+161d) |  |  | 31.91d → 0d | constraint finish no earlier than 2026-08-21 → none; baseline start none → 2026-08-21; baseline finish none → 2026-08-21 |
| 24 | KM: UX/UI v1 zatwierdzone (Design freeze) | 2026-08-31 → 2027-02-16 (+169d) | 2026-08-31 → 2027-02-16 (+169d) |  |  | 21.94d → 0d | constraint finish no earlier than 2026-08-31 → none; baseline start none → 2026-08-31; baseline finish none → 2026-08-31 |
| 25 | KM: Refaktoryzacja rdzenia zakończona | 2026-08-31 → 2027-02-16 (+169d) | 2026-08-31 → 2027-02-16 (+169d) |  |  | 21.94d → 0d | constraint finish no earlier than 2026-08-31 → none; baseline start none → 2026-08-31; baseline finish none → 2026-08-31 |
| 26 | KM: Release Beta udostępniony testerom | 2026-09-08 → 2027-03-20 (+193d) | 2026-09-08 → 2027-03-20 (+193d) |  |  | 13.96d → 0d | constraint finish no earlier than 2026-09-08 → none; baseline start none → 2026-09-08; baseline finish none → 2026-09-08 |
| 27 | KM: Release Candidate / wersja finalna gotowa | 2026-09-08 → 2027-03-20 (+193d) | 2026-09-08 → 2027-03-20 (+193d) |  |  | 13.96d → 0d | constraint finish no earlier than 2026-09-08 → none; baseline start none → 2026-09-08; baseline finish none → 2026-09-08 |
| 28 | KM: Infrastruktura produkcyjna gotowa | 2026-09-10 → 2027-03-28 (+199d) | 2026-09-10 → 2027-03-28 (+199d) |  |  | 11.96d → 0d | constraint finish no earlier than 2026-09-10 → none; baseline start none → 2026-09-10; baseline finish none → 2026-09-10 |
| 29 | KM: Monitoring i alerty skonfigurowane | 2026-09-15 → 2027-04-08 (+205d) | 2026-09-15 → 2027-04-08 (+205d) |  |  | 6.98d → 0d | constraint finish no earlier than 2026-09-15 → none; baseline start none → 2026-09-15; baseline finish none → 2026-09-15 |
| 30 | KM: Go-live – wdrożenie na produkcję | 2026-09-22 → 2027-04-21 (+211d) | 2026-09-22 → 2027-04-21 (+211d) |  |  |  | constraint finish no earlier than 2026-09-22 → none; baseline start none → 2026-09-22; baseline finish none → 2026-09-22 |
| 31 | KM: Przekazanie do utrzymania + DR/backup gotowe | 2026-07-29 → 2027-05-08 (+283d) | 2026-07-29 → 2027-05-08 (+283d) |  |  | 54.16d → 0d | baseline start none → 2026-07-29; baseline finish none → 2026-07-29 |
| 32 | KM: Zamknięcie projektu | 2026-07-29 → 2027-05-08 (+283d) | 2026-07-29 → 2027-05-08 (+283d) |  |  | 54.16d → 0d | baseline start none → 2026-07-29; baseline finish none → 2026-07-29 |
| 33 | **Etap koncepcyjny** | 2025-12-01 A | 2026-01-07 → 2026-09-19 (+255d) | 25.05d → 275.4d | 0% → 74% | 55.16d → 0d | baseline start none → 2025-12-01; baseline finish none → 2026-01-07 |
| 34 | **Analiza i Wybór Technologii** | 2025-12-01 → 2025-12-03 A (+2d) | 2025-12-03 → 2025-12-04 A (+1d) | 2.13d → 1d | 0% → 100% | 55.16d → none | baseline start none → 2025-12-01; baseline finish none → 2025-12-03 |
| 35 | Analiza wymagań niefunkcjonalnych systemu | 2025-12-01 → 2025-12-04 A (+3d) | 2025-12-01 → 2025-12-04 A (+3d) |  | 0% → 100% | 55.16d → none | baseline start none → 2025-12-01; baseline finish none → 2025-12-01 |
| 36 | Porównanie frameworków JavaScript (React vs Vue vs Angular) | 2025-12-01 → 2025-12-04 A (+3d) | 2025-12-01 → 2025-12-04 A (+3d) | 30min → 60min | 0% → 100% | 55.16d → none | baseline start none → 2025-12-01; baseline finish none → 2025-12-01 |
| 37 | Decyzja: Wybór frameworka Front-End | 2025-12-01 → 2025-12-04 A (+3d) | 2025-12-01 → 2025-12-04 A (+3d) |  | 0% → 100% | 55.16d → none | baseline start none → 2025-12-01; baseline finish none → 2025-12-01 |
| 38 | Porównanie architektur Back-End (PHP/Laravel vs Node.js/Nest vs Python/Django) | 2025-12-01 → 2025-12-04 A (+3d) | 2025-12-01 → 2025-12-04 A (+3d) | 30min → 60min | 0% → 100% | 55.16d → none | baseline start none → 2025-12-01; baseline finish none → 2025-12-01 |
| 39 | Decyzja: Wybór frameworka Back-End | 2025-12-01 → 2025-12-04 A (+3d) | 2025-12-01 → 2025-12-04 A (+3d) |  | 0% → 100% | 55.16d → none | baseline start none → 2025-12-01; baseline finish none → 2025-12-01 |
| 40 | Analiza systemów baz danych (MySQL vs PostgreSQL vs MongoDB) | 2025-12-01 → 2025-12-04 A (+3d) | 2025-12-01 → 2025-12-04 A (+3d) | 30min → 60min | 0% → 100% | 55.16d → none | baseline start none → 2025-12-01; baseline finish none → 2025-12-01 |
| 41 | Decyzja: Wybór silnika bazy danych | 2025-12-01 → 2025-12-03 A (+2d) | 2025-12-02 → 2025-12-04 A (+2d) |  | 0% → 100% | 55.16d → none | baseline start none → 2025-12-01; baseline finish none → 2025-12-02 |
| 42 | Analiza protokołów Real-Time (WebSocket vs SSE vs Long Polling) | 2025-12-02 → 2025-12-04 A (+2d) | 2025-12-02 → 2025-12-04 A (+2d) | 10min → 60min | 0% → 100% | 55.16d → none | baseline start none → 2025-12-02; baseline finish none → 2025-12-02 |
| 43 | Decyzja: Wybór protokołu Real-Time | 2025-12-02 → 2025-12-04 A (+2d) | 2025-12-02 → 2025-12-04 A (+2d) |  | 0% → 100% | 55.16d → none | baseline start none → 2025-12-02; baseline finish none → 2025-12-02 |
| 44 | Projekt strategii konteneryzacji | 2025-12-02 → 2025-12-04 A (+2d) | 2025-12-03 → 2025-12-04 A (+1d) |  | 0% → 100% | 55.16d → none | baseline start none → 2025-12-02; baseline finish none → 2025-12-03 |
| 45 | **Projektowanie Architektury Systemu** | 2025-12-03 → 2025-12-04 A (+1d) | 2025-12-06 → 2026-09-03 (+271d) | 3d → 256.2d | 0% → 73% | 55.16d → 0d | baseline start none → 2025-12-03; baseline finish none → 2025-12-06 |
| 46 | Opracowanie diagramu kontekstowego systemu (C4 Level 1) | 2025-12-03 → 2026-08-19 A (+259d) | 2025-12-04 → 2026-08-28 (+267d) | 1d → 2.13d | 0% → 25% | 55.16d → 0d | baseline start none → 2025-12-03; baseline finish none → 2025-12-04 |
| 47 | Projekt architektury kontenerowej (C4 Level 2) | 2025-12-04 → 2026-08-19 A (+258d) | 2025-12-04 → 2026-08-30 (+269d) | 1h → 16h | 0% → 25% | 55.16d → 0d | baseline start none → 2025-12-04; baseline finish none → 2025-12-04 |
| 48 | Definicja warstwy prezentacji (SPA/CSR) | 2025-12-04 A | 2025-12-04 A | 15min → 60min | 0% → 100% | 55.16d → none | baseline start none → 2025-12-04; baseline finish none → 2025-12-04 |
| 49 | Projekt API REST (OpenAPI/Swagger 3.0) | 2025-12-04 → 2026-08-16 A (+255d) | 2025-12-04 → 2026-09-01 (+271d) | 1h → 26.67h | 0% → 70% | 55.16d → 0d | baseline start none → 2025-12-04; baseline finish none → 2025-12-04 |
| 50 | Projekt architektury WebSocket (Socket.io Rooms) | 2025-12-04 → 2026-08-12 A (+251d) | 2025-12-05 → 2026-09-02 (+271d) | 5h → 40h | 0% → 90% | 55.16d → 0d | baseline start none → 2025-12-04; baseline finish none → 2025-12-05 |
| 51 | Projekt modułu uwierzytelniania (JWT Strategy) | 2025-12-05 → 2025-12-07 A (+2d) | 2025-12-05 → 2025-12-07 A (+2d) | 45min → 60min | 0% → 100% | 55.16d → none | baseline start none → 2025-12-05; baseline finish none → 2025-12-05 |
| 52 | Projekt logiki Wirtualnych Stołów (Game State Management) | 2025-12-05 → 2026-08-10 A (+248d) | 2025-12-06 → 2026-09-03 (+271d) | 1h → 53.33h | 0% → 85% | 55.16d → 0d | baseline start none → 2025-12-05; baseline finish none → 2025-12-06 |
| 53 | Projekt systemu czatu (Message Broker Pattern) | 2025-12-06 → 2026-08-19 A (+256d) | 2025-12-06 → 2026-08-19 A (+256d) |  | 0% → 100% | 55.16d → none | baseline start none → 2025-12-06; baseline finish none → 2025-12-06 |
| 54 | **Modelowanie Danych** | 2025-12-06 → 2025-12-07 A (+1d) | 2025-12-14 → 2026-09-12 (+272d) | 8.2d → 262d | 0% → 72% | 55.16d → 0d | baseline start none → 2025-12-06; baseline finish none → 2025-12-14 |
| 55 | Opracowanie diagramu ERD (Entity Relationship Diagram) | 2025-12-06 → 2026-08-17 A (+254d) | 2025-12-07 → 2026-09-06 (+273d) | 1d → 4.8d | 0% → 50% | 55.16d → 0d | baseline start none → 2025-12-06; baseline finish none → 2025-12-07 |
| 56 | Projekt schematu: Tabela Users | 2025-12-07 A | 2025-12-07 A | 30min → 60min | 0% → 100% | 55.16d → none | baseline start none → 2025-12-07; baseline finish none → 2025-12-07 |
| 57 | Projekt schematu: Tabela Sessions (Kampanie) | 2025-12-07 → 2026-08-19 A (+255d) | 2025-12-07 → 2026-08-19 A (+255d) |  | 0% → 100% | 55.16d → none | baseline start none → 2025-12-07; baseline finish none → 2025-12-07 |
| 58 | Projekt schematu: Tabela Tables (Stoły/Blaty) | 2025-12-07 → 2026-08-19 A (+255d) | 2025-12-08 → 2026-08-19 A (+254d) |  | 0% → 100% | 55.16d → none | baseline start none → 2025-12-07; baseline finish none → 2025-12-08 |
| 59 | Projekt schematu: Tabela Maps | 2025-12-08 → 2026-08-19 A (+254d) | 2025-12-08 → 2026-08-19 A (+254d) |  | 0% → 100% | 55.16d → none | baseline start none → 2025-12-08; baseline finish none → 2025-12-08 |
| 60 | Projekt schematu: Tabela Tokens (Pionki) | 2025-12-08 → 2026-08-24 A (+259d) | 2025-12-09 → 2026-08-24 A (+258d) |  | 0% → 100% | 55.16d → none | baseline start none → 2025-12-08; baseline finish none → 2025-12-09 |
| 61 | Projekt schematu: Tabela Characters (Postacie) | 2025-12-09 A | 2025-12-09 A | 30min → 60min | 0% → 100% | 55.16d → none | baseline start none → 2025-12-09; baseline finish none → 2025-12-09 |
| 62 | Projekt schematu: Tabela Inventory (Ekwipunek) | 2025-12-09 → 2026-08-19 A (+253d) | 2025-12-09 → 2026-08-19 A (+253d) |  | 0% → 100% | 55.16d → none | baseline start none → 2025-12-09; baseline finish none → 2025-12-09 |
| 63 | Projekt schematu: Tabela Items (Przedmioty) | 2025-12-09 → 2026-08-19 A (+253d) | 2025-12-09 → 2026-08-19 A (+253d) |  | 0% → 100% | 55.16d → none | baseline start none → 2025-12-09; baseline finish none → 2025-12-09 |
| 64 | Projekt schematu: Tabela ChatMessages | 2025-12-09 → 2026-08-19 A (+253d) | 2025-12-10 → 2026-08-19 A (+252d) |  | 0% → 100% | 55.16d → none | baseline start none → 2025-12-09; baseline finish none → 2025-12-10 |
| 65 | Projekt schematu: Tabela DiceRolls (Historia rzutów) | 2025-12-10 → 2026-09-06 (+270d) | 2025-12-10 → 2026-09-07 (+271d) | 2h → 6h |  | 55.16d → 0d | baseline start none → 2025-12-10; baseline finish none → 2025-12-10 |
| 66 | Projekt schematu: Tabela Invitations (Zaproszenia) | 2025-12-10 → 2026-08-19 A (+252d) | 2025-12-11 → 2026-08-19 A (+251d) |  | 0% → 100% | 55.16d → none | baseline start none → 2025-12-10; baseline finish none → 2025-12-11 |
| 67 | Projekt schematu: Tabela Macros (Makra graczy) | 2025-12-11 → 2026-09-07 (+270d) | 2025-12-12 → 2026-09-08 (+270d) |  |  | 55.16d → 0d | baseline start none → 2025-12-11; baseline finish none → 2025-12-12 |
| 68 | Normalizacja bazy danych (3NF) | 2025-12-12 → 2026-08-10 A (+241d) | 2025-12-13 → 2026-09-10 (+271d) | 1d → 10.67d | 0% → 85% | 55.16d → 0d | baseline start none → 2025-12-12; baseline finish none → 2025-12-13 |
| 69 | Projekt indeksów i constraintów | 2025-12-13 → 2026-08-12 A (+242d) | 2025-12-14 → 2026-09-12 (+272d) | 1d → 9.6d | 0% → 75% | 55.16d → 0d | baseline start none → 2025-12-13; baseline finish none → 2025-12-14 |
| 70 | **Przygotowanie środowiska deweloperskiego** | 2025-12-14 → 2025-12-01 A (-13d) | 2026-01-07 → 2026-09-19 (+255d) | 11.72d → 275.4d | 0% → 76% | 55.16d → 0d | baseline start none → 2025-12-14; baseline finish none → 2026-01-07 |

| ID | Task | Start | Finish | Duration | Complete | Total float | Other |
| --- | --- | --- | --- | --- | --- | --- | --- |
| 71 | Inicjalizacja repozytorium Git | 2025-12-14 → 2025-12-04 A (-10d) | 2025-12-14 → 2025-12-04 A (-10d) | 15min → 60min | 0% → 100% | 55.16d → none | baseline start none → 2025-12-14; baseline finish none → 2025-12-14 |
| 72 | Konfiguracja .gitignore | 2025-12-14 → 2025-12-04 A (-10d) | 2025-12-14 → 2025-12-04 A (-10d) | 15min → 60min | 0% → 100% | 55.16d → none | baseline start none → 2025-12-14; baseline finish none → 2025-12-14 |
| 73 | Ustalenie konwencji commitów (Conventional Commits) | 2025-12-14 → 2025-12-04 A (-10d) | 2025-12-14 → 2025-12-04 A (-10d) | 5min → 60min | 0% → 100% | 55.16d → none | baseline start none → 2025-12-14; baseline finish none → 2025-12-14 |
| 74 | Konfiguracja ESLint + Prettier (Frontend) | 2025-12-14 → 2025-12-01 A (-13d) | 2025-12-14 → 2026-09-13 (+273d) | 1h → 20h | 0% → 90% | 55.16d → 0d | baseline start none → 2025-12-14; baseline finish none → 2025-12-14 |
| 75 | Konfiguracja PHP-CS-Fixer (Backend) | 2025-12-14 → 2026-09-13 (+273d) | 2025-12-15 → 2026-09-14 (+273d) | 2h → 6h |  | 55.16d → 0d | baseline start none → 2025-12-14; baseline finish none → 2025-12-15 |
| 76 | Setup Docker Compose (wersja multi-stage) | 2025-12-15 → 2025-12-01 A (-14d) | 2025-12-16 → 2026-09-15 (+273d) | 1d → 8d | 0% → 90% | 55.16d → 0d | baseline start none → 2025-12-15; baseline finish none → 2025-12-16 |
| 77 | Konfiguracja kontenera MySQL | 2025-12-16 → 2025-12-04 A (-12d) | 2025-12-17 → 2025-12-05 A (-12d) |  | 0% → 100% | 55.16d → none | baseline start none → 2025-12-16; baseline finish none → 2025-12-17 |
| 78 | Konfiguracja kontenera PHP-FPM | 2025-12-17 → 2025-12-04 A (-13d) | 2025-12-18 → 2025-12-05 A (-13d) |  | 0% → 100% | 55.16d → none | baseline start none → 2025-12-17; baseline finish none → 2025-12-18 |
| 79 | Konfiguracja kontenera Node (Frontend) | 2025-12-18 → 2025-12-04 A (-14d) | 2025-12-19 → 2025-12-05 A (-14d) |  | 0% → 100% | 55.16d → none | baseline start none → 2025-12-18; baseline finish none → 2025-12-19 |
| 80 | Konfiguracja kontenera Node (WebSocket) | 2025-12-19 → 2025-12-04 A (-15d) | 2025-12-20 → 2025-12-05 A (-15d) |  | 0% → 100% | 55.16d → none | baseline start none → 2025-12-19; baseline finish none → 2025-12-20 |
| 81 | Konfiguracja kontenera Nginx | 2025-12-20 → 2025-12-04 A (-16d) | 2025-12-21 → 2025-12-05 A (-16d) |  | 0% → 100% | 55.16d → none | baseline start none → 2025-12-20; baseline finish none → 2025-12-21 |
| 82 | Konfiguracja GitHub Actions: Lint (Backend + Frontend) | 2025-12-21 → 2026-09-15 (+268d) | 2025-12-22 → 2026-09-16 (+268d) | 1d → 1.6d |  | 55.16d → 0d | baseline start none → 2025-12-21; baseline finish none → 2025-12-22 |
| 83 | Konfiguracja GitHub Actions: Testy (PHPUnit) | 2025-12-22 → 2026-09-16 (+268d) | 2026-01-04 → 2026-09-18 (+257d) | 1d → 1.6d |  | 55.16d → 0d | baseline start none → 2025-12-22; baseline finish none → 2026-01-04 |
| 84 | Konfiguracja GitHub Actions: Build Frontend | 2026-01-04 → 2026-09-18 (+257d) | 2026-01-05 → 2026-09-19 (+257d) | 1d → 1.2d |  | 55.16d → 0d | baseline start none → 2026-01-04; baseline finish none → 2026-01-05 |
| 85 | Setup zmiennych środowiskowych (.env) | 2026-01-05 → 2025-12-04 A (-32d) | 2026-01-06 → 2025-12-05 A (-32d) |  | 0% → 100% | 55.16d → none | baseline start none → 2026-01-05; baseline finish none → 2026-01-06 |
| 86 | Weryfikacja Health Check wszystkich kontenerów | 2026-01-06 → 2026-08-25 A (+231d) | 2026-01-07 → 2026-08-26 A (+231d) |  | 0% → 100% | 55.16d → none | baseline start none → 2026-01-06; baseline finish none → 2026-01-07 |
| 87 | Konfiguracja Monorepo (CI4 + Vue3) | 2025-12-14 → 2025-12-03 A (-11d) | 2025-12-15 → 2025-12-04 A (-11d) |  | 0% → 100% |  | baseline start none → 2025-12-14; baseline finish none → 2025-12-15 |
| 88 | Dodanie lokalnej konfiguracji SSL (mkcert) i obszaru roboczego VS Code | 2025-12-14 → 2025-12-04 A (-10d) | 2025-12-15 → 2025-12-05 A (-10d) |  | 0% → 100% |  | baseline start none → 2025-12-14; baseline finish none → 2025-12-15 |
| 89 | Repo (develop): Add Docker setup | 2025-12-14 → 2025-12-04 A (-10d) | 2025-12-15 → 2025-12-05 A (-10d) |  | 0% → 100% |  | baseline start none → 2025-12-14; baseline finish none → 2025-12-15 |
| 90 | **Etap projektowania szczegółowego** | 2026-01-07 A → 2025-12-03 A (-35d) | 2026-07-29 → 2027-05-08 (+283d) | 198d? → 503.4d? | 0% → 50% | 54.16d → 0d | baseline start none → 2026-01-07; baseline finish none → 2026-07-29 |
| 91 | **Podstawowe funkcjonalności aplikacji** | 2026-01-07 A → 2025-12-03 A (-35d) | 2026-06-08 → 2026-12-09 (+184d) | 147d? → 353.8d? | 1% → 71% | 105.16d → 0d | baseline start none → 2026-01-07; baseline finish none → 2026-06-08 |
| 92 | **Infrastruktura Bazodanowa** | 2026-01-07 → 2025-12-06 A (-32d) | 2026-01-21 → 2026-09-25 (+247d) | 14d? → 275.2d? | 0% → 91% | 55.16d → 0d | baseline start none → 2026-01-07; baseline finish none → 2026-01-21 |
| 93 | **Implementacja systemu migracji (CodeIgniter Migrations)** | 2026-01-07 → 2025-12-06 A (-32d) | 2026-01-19 → 2026-09-23 (+247d) | 12d? → 273.6d? | 0% → 91% | 55.16d → 0d | baseline start none → 2026-01-07; baseline finish none → 2026-01-19 |
| 94 | Migracja 1: Tabela Users | 2026-01-07 → 2025-12-06 A (-32d) | 2026-01-08 → 2025-12-07 A (-32d) |  | 0% → 100% | 55.16d → none | baseline start none → 2026-01-07; baseline finish none → 2026-01-08 |
| 95 | Migracja 1: Tabela Sessions (Kampanie) | 2026-01-08 → 2026-08-18 A (+222d) | 2026-01-09 → 2026-08-19 A (+222d) |  | 0% → 100% | 55.16d → none | baseline start none → 2026-01-08; baseline finish none → 2026-01-09 |
| 96 | Migracja 1: Tabela Characters | 2026-01-12 → 2025-12-08 A (-35d) | 2026-01-13 → 2025-12-09 A (-35d) |  | 0% → 100% | 55.16d → none | baseline start none → 2026-01-12; baseline finish none → 2026-01-13 |
| 97 | Migracja 2: Tabela Rpg_systems | 2026-01-07 → 2025-12-19 A (-19d) | 2026-01-08 → 2025-12-20 A (-19d) |  | 0% → 100% | 251.16d → none | baseline start none → 2026-01-07; baseline finish none → 2026-01-08 |
| 98 | Migracja 2: Tabela Rpg_universes | 2026-01-07 → 2025-12-19 A (-19d) | 2026-01-08 → 2025-12-20 A (-19d) |  | 0% → 100% | 251.16d → none | baseline start none → 2026-01-07; baseline finish none → 2026-01-08 |
| 99 | Migracja 3: Tabela Rpg_system_universes (pivot) | 2026-01-07 → 2025-12-19 A (-19d) | 2026-01-08 → 2025-12-20 A (-19d) |  | 0% → 100% | 251.16d → none | baseline start none → 2026-01-07; baseline finish none → 2026-01-08 |
| 100 | Migracja 2: Tabela Rpg_game_definitions | 2026-01-07 → 2025-12-19 A (-19d) | 2026-01-08 → 2025-12-20 A (-19d) |  | 0% → 100% | 251.16d → none | baseline start none → 2026-01-07; baseline finish none → 2026-01-08 |
| 101 | Migracja 4: Tabela Profession_equipment | 2026-01-07 → 2025-12-19 A (-19d) | 2026-01-08 → 2025-12-20 A (-19d) |  | 0% → 100% | 251.16d → none | baseline start none → 2026-01-07; baseline finish none → 2026-01-08 |
| 102 | Migracja 4: Tabela Profession_path | 2026-01-07 → 2025-12-19 A (-19d) | 2026-01-08 → 2025-12-20 A (-19d) |  | 0% → 100% | 251.16d → none | baseline start none → 2026-01-07; baseline finish none → 2026-01-08 |
| 103 | Migracja: Tabela Profession_definitions | 2026-01-07 → 2025-12-19 A (-19d) | 2026-01-08 → 2025-12-20 A (-19d) |  | 0% → 100% | 251.16d → none | baseline start none → 2026-01-07; baseline finish none → 2026-01-08 |
| 104 | Migracja: Tabela Profession_attributes | 2026-01-07 → 2025-12-19 A (-19d) | 2026-01-08 → 2025-12-20 A (-19d) |  | 0% → 100% | 251.16d → none | baseline start none → 2026-01-07; baseline finish none → 2026-01-08 |
| 105 | Migracja: Tabela Professions | 2026-01-07 → 2025-12-19 A (-19d) | 2026-01-08 → 2025-12-20 A (-19d) |  | 0% → 100% | 251.16d → none | baseline start none → 2026-01-07; baseline finish none → 2026-01-08 |
| 106 | Migracja: Tabela Character_custom_unlocks | 2026-01-07 → 2025-12-19 A (-19d) | 2026-01-08 → 2025-12-20 A (-19d) |  | 0% → 100% | 251.16d → none | baseline start none → 2026-01-07; baseline finish none → 2026-01-08 |
| 107 | Migracja: Tabela Character_attribute_advances | 2026-01-07 → 2025-12-19 A (-19d) | 2026-01-08 → 2025-12-20 A (-19d) |  | 0% → 100% | 251.16d → none | baseline start none → 2026-01-07; baseline finish none → 2026-01-08 |
| 108 | Migracja: Tabela Character_professions | 2026-01-07 → 2025-12-19 A (-19d) | 2026-01-08 → 2025-12-20 A (-19d) |  | 0% → 100% | 251.16d → none | baseline start none → 2026-01-07; baseline finish none → 2026-01-08 |
| 109 | Migracja: Tabela Magic_path_spells | 2026-01-07 → 2025-12-19 A (-19d) | 2026-01-08 → 2025-12-20 A (-19d) |  | 0% → 100% | 251.16d → none | baseline start none → 2026-01-07; baseline finish none → 2026-01-08 |
| 110 | Migracja: Tabela Magic_paths | 2026-01-07 → 2025-12-19 A (-19d) | 2026-01-08 → 2025-12-20 A (-19d) |  | 0% → 100% | 251.16d → none | baseline start none → 2026-01-07; baseline finish none → 2026-01-08 |
| 111 | Migracja: Tabela Item_bundle_items | 2026-01-07 → 2025-12-19 A (-19d) | 2026-01-08 → 2025-12-20 A (-19d) |  | 0% → 100% | 251.16d → none | baseline start none → 2026-01-07; baseline finish none → 2026-01-08 |
| 112 | Migracja: Tabela Item_bundles | 2026-01-07 → 2025-12-19 A (-19d) | 2026-01-08 → 2025-12-20 A (-19d) |  | 0% → 100% | 251.16d → none | baseline start none → 2026-01-07; baseline finish none → 2026-01-08 |
| 113 | Migracja: Tabela Items | 2026-01-07 → 2025-12-19 A (-19d) | 2026-01-08 → 2025-12-20 A (-19d) |  | 0% → 100% | 251.16d → none | baseline start none → 2026-01-07; baseline finish none → 2026-01-08 |
| 114 | Migracja: Tabela Item_classes | 2026-01-07 → 2025-12-19 A (-19d) | 2026-01-08 → 2025-12-20 A (-19d) |  | 0% → 100% | 251.16d → none | baseline start none → 2026-01-07; baseline finish none → 2026-01-08 |
| 115 | Migracja: Tabela Insanities | 2026-01-07 → 2025-12-19 A (-19d) | 2026-01-08 → 2025-12-20 A (-19d) |  | 0% → 100% | 251.16d → none | baseline start none → 2026-01-07; baseline finish none → 2026-01-08 |
| 116 | Migracja: Tabela Weapon_traits | 2026-01-07 → 2025-12-19 A (-19d) | 2026-01-08 → 2025-12-20 A (-19d) |  | 0% → 100% | 251.16d → none | baseline start none → 2026-01-07; baseline finish none → 2026-01-08 |
| 117 | Migracja: Tabela Combat_actions | 2026-01-07 → 2025-12-19 A (-19d) | 2026-01-08 → 2025-12-20 A (-19d) |  | 0% → 100% | 251.16d → none | baseline start none → 2026-01-07; baseline finish none → 2026-01-08 |
| 118 | **Migracje: i18n (translations + locales)** | 2026-01-07 → 2025-12-19 A (-19d) | 2026-01-08 → 2025-12-20 A (-19d) |  | 0% → 100% | 251.16d → none | baseline start none → 2026-01-07; baseline finish none → 2026-01-08 |
| 119 | Migracja: Tabela Magic_path_translations | 2026-01-07 → 2025-12-19 A (-19d) | 2026-01-08 → 2025-12-20 A (-19d) |  | 0% → 100% | 251.16d → none | baseline start none → 2026-01-07; baseline finish none → 2026-01-08 |
| 120 | Migracja: Tabela Insanity_translations | 2026-01-07 → 2025-12-19 A (-19d) | 2026-01-08 → 2025-12-20 A (-19d) |  | 0% → 100% | 251.16d → none | baseline start none → 2026-01-07; baseline finish none → 2026-01-08 |
| 121 | Migracja: Tabela Weapon_trait_translations | 2026-01-07 → 2025-12-19 A (-19d) | 2026-01-08 → 2025-12-20 A (-19d) |  | 0% → 100% | 251.16d → none | baseline start none → 2026-01-07; baseline finish none → 2026-01-08 |
| 122 | Migracja: Tabela Combat_action_translations | 2026-01-07 → 2025-12-19 A (-19d) | 2026-01-08 → 2025-12-20 A (-19d) |  | 0% → 100% | 251.16d → none | baseline start none → 2026-01-07; baseline finish none → 2026-01-08 |
| 123 | Migracja: Tabela Item_bundle_translations | 2026-01-07 → 2025-12-19 A (-19d) | 2026-01-08 → 2025-12-20 A (-19d) |  | 0% → 100% | 251.16d → none | baseline start none → 2026-01-07; baseline finish none → 2026-01-08 |
| 124 | Migracja: Tabela Item_class_translations | 2026-01-07 → 2025-12-19 A (-19d) | 2026-01-08 → 2025-12-20 A (-19d) |  | 0% → 100% | 251.16d → none | baseline start none → 2026-01-07; baseline finish none → 2026-01-08 |
| 125 | Migracja: Tabela Item_translations | 2026-01-07 → 2025-12-19 A (-19d) | 2026-01-08 → 2025-12-20 A (-19d) |  | 0% → 100% | 251.16d → none | baseline start none → 2026-01-07; baseline finish none → 2026-01-08 |
| 126 | Migracja: Tabela Game_definition_translations | 2026-01-07 → 2025-12-19 A (-19d) | 2026-01-08 → 2025-12-20 A (-19d) |  | 0% → 100% | 251.16d → none | baseline start none → 2026-01-07; baseline finish none → 2026-01-08 |
| 127 | Migracja: Tabela Locales | 2026-01-07 → 2025-12-19 A (-19d) | 2026-01-08 → 2025-12-20 A (-19d) |  | 0% → 100% | 251.16d → none | baseline start none → 2026-01-07; baseline finish none → 2026-01-08 |
| 128 | Migracja: Tabela Tables (Stoły) | 2026-01-09 → 2026-08-18 A (+221d) | 2026-01-10 → 2026-08-19 A (+221d) |  | 0% → 100% | 55.16d → none | baseline start none → 2026-01-09; baseline finish none → 2026-01-10 |
| 129 | Migracja: Tabela Maps | 2026-01-10 → 2026-08-18 A (+220d) | 2026-01-11 → 2026-08-19 A (+220d) |  | 0% → 100% | 55.16d → none | baseline start none → 2026-01-10; baseline finish none → 2026-01-11 |
| 130 | Migracja: Tabela Tokens (Pionki) | 2026-01-11 → 2026-08-23 A (+224d) | 2026-01-12 → 2026-08-24 A (+224d) |  | 0% → 100% | 55.16d → none | baseline start none → 2026-01-11; baseline finish none → 2026-01-12 |
| 131 | Migracja: Tabela Inventory | 2026-01-13 → 2026-08-18 A (+217d) | 2026-01-14 → 2026-08-19 A (+217d) |  | 0% → 100% | 55.16d → none | baseline start none → 2026-01-13; baseline finish none → 2026-01-14 |
| 132 | Migracja: Tabela Items | 2026-01-14 → 2026-08-18 A (+216d) | 2026-01-15 → 2026-08-19 A (+216d) |  | 0% → 100% | 55.16d → none | baseline start none → 2026-01-14; baseline finish none → 2026-01-15 |
| 133 | Migracja: Tabela ChatMessages | 2026-01-15 → 2026-08-18 A (+215d) | 2026-01-16 → 2026-08-19 A (+215d) |  | 0% → 100% | 55.16d → none | baseline start none → 2026-01-15; baseline finish none → 2026-01-16 |
| 134 | Migracja: Tabela DiceRolls | 2026-01-16 → 2026-09-19 (+246d) | 2026-01-17 → 2026-09-21 (+247d) | 1d → 1.6d |  | 55.16d → 0d | baseline start none → 2026-01-16; baseline finish none → 2026-01-17 |
| 135 | Migracja: Tabela Invitations | 2026-01-17 → 2026-08-18 A (+213d) | 2026-01-18 → 2026-08-19 A (+213d) |  | 0% → 100% | 55.16d → none | baseline start none → 2026-01-17; baseline finish none → 2026-01-18 |
| 136 | Migracja: Tabela Macros | 2026-01-18 → 2026-09-21 (+246d) | 2026-01-19 → 2026-09-23 (+247d) | 1d → 2.4d |  | 55.16d → 0d | baseline start none → 2026-01-18; baseline finish none → 2026-01-19 |
| 137 | **Implementacja Seeders (dane legacy)** | 2026-01-19 → 2026-01-10 A (-9d) | 2026-01-20 → 2026-01-11 A (-9d) |  | 0% → 100% | 55.16d → none | baseline start none → 2026-01-19; baseline finish none → 2026-01-20 |
| 138 | A_MasterSeeder | 2026-01-19 → 2026-01-10 A (-9d) | 2026-01-20 → 2026-01-11 A (-9d) |  | 0% → 100% | 55.16d → none | baseline start none → 2026-01-19; baseline finish none → 2026-01-20 |
| 139 | Tabela Characters: CharacterLegacySeeder | 2026-01-19 → 2026-01-10 A (-9d) | 2026-01-20 → 2026-01-11 A (-9d) |  | 0% → 100% | 55.16d → none | baseline start none → 2026-01-19; baseline finish none → 2026-01-20 |
| 140 | Tabela character_professions: CharacterProfessionsLegacySeeder | 2026-01-19 → 2026-01-10 A (-9d) | 2026-01-20 → 2026-01-11 A (-9d) |  | 0% → 100% | 55.16d → none | baseline start none → 2026-01-19; baseline finish none → 2026-01-20 |

| ID | Task | Start | Finish | Duration | Complete | Total float | Other |
| --- | --- | --- | --- | --- | --- | --- | --- |
| 141 | Tabela Professions: ProfessionsLegacySeeder | 2026-01-19 → 2026-01-10 A (-9d) | 2026-01-20 → 2026-01-11 A (-9d) |  | 0% → 100% | 55.16d → none | baseline start none → 2026-01-19; baseline finish none → 2026-01-20 |
| 142 | LocalizationSeeder | 2026-01-19 → 2026-01-10 A (-9d) | 2026-01-20 → 2026-01-11 A (-9d) |  | 0% → 100% | 55.16d → none | baseline start none → 2026-01-19; baseline finish none → 2026-01-20 |
| 143 | RpgInitializationSeeder | 2026-01-19 → 2026-01-10 A (-9d) | 2026-01-20 → 2026-01-11 A (-9d) |  | 0% → 100% | 55.16d → none | baseline start none → 2026-01-19; baseline finish none → 2026-01-20 |
| 144 | WarhammerCombatSeeder | 2026-01-19 → 2026-01-10 A (-9d) | 2026-01-20 → 2026-01-11 A (-9d) |  | 0% → 100% | 55.16d → none | baseline start none → 2026-01-19; baseline finish none → 2026-01-20 |
| 145 | WarhammerDefinitionsSeeder | 2026-01-19 → 2026-01-10 A (-9d) | 2026-01-20 → 2026-01-11 A (-9d) |  | 0% → 100% | 55.16d → none | baseline start none → 2026-01-19; baseline finish none → 2026-01-20 |
| 146 | WarhammerEquipmentSeeder | 2026-01-19 → 2026-01-10 A (-9d) | 2026-01-20 → 2026-01-11 A (-9d) |  | 0% → 100% | 55.16d → none | baseline start none → 2026-01-19; baseline finish none → 2026-01-20 |
| 147 | WarhammerInsanitySeeder | 2026-01-19 → 2026-01-10 A (-9d) | 2026-01-20 → 2026-01-11 A (-9d) |  | 0% → 100% | 55.16d → none | baseline start none → 2026-01-19; baseline finish none → 2026-01-20 |
| 148 | Base/SystemBaseSeeder (abstrakcyjna klasa bazowa) | 2026-01-19 → 2026-01-10 A (-9d) | 2026-01-20 → 2026-01-11 A (-9d) |  | 0% → 100% | 55.16d → none | baseline start none → 2026-01-19; baseline finish none → 2026-01-20 |
| 149 | Base/Coc7eBaseSeeder | 2026-01-19 → 2026-01-10 A (-9d) | 2026-01-20 → 2026-01-11 A (-9d) |  | 0% → 100% | 55.16d → none | baseline start none → 2026-01-19; baseline finish none → 2026-01-20 |
| 150 | Base/WfrpBaseSeeder | 2026-01-19 → 2026-01-10 A (-9d) | 2026-01-20 → 2026-01-11 A (-9d) |  | 0% → 100% | 55.16d → none | baseline start none → 2026-01-19; baseline finish none → 2026-01-20 |
| 151 | Testy migracji (rollback + migrate) | 2026-01-20 → 2026-08-20 A (+212d) | 2026-01-21 → 2026-09-25 (+247d) | 1d → 8d | 0% → 80% | 55.16d → 0d | baseline start none → 2026-01-20; baseline finish none → 2026-01-21 |
| 152 | **Moduł Uwierzytelniania (Auth)** | 2026-01-21 → 2025-12-06 A (-46d) | 2026-02-01 → 2026-09-29 (+240d) | 11d → 280d | 0% → 70% | 55.16d → 0d | baseline start none → 2026-01-21; baseline finish none → 2026-02-01 |
| 153 | Implementacja modelu User (Model ORM) | 2026-01-21 → 2025-12-06 A (-46d) | 2026-01-22 → 2025-12-07 A (-46d) |  | 0% → 100% | 55.16d → none | baseline start none → 2026-01-21; baseline finish none → 2026-01-22 |
| 154 | Implementacja biblioteki JWT (Firebase JWT) | 2026-01-22 → 2025-12-06 A (-47d) | 2026-01-23 → 2025-12-07 A (-47d) |  | 0% → 100% | 55.16d → none | baseline start none → 2026-01-22; baseline finish none → 2026-01-23 |
| 155 | Implementacja controllera AuthController | 2026-01-23 → 2025-12-06 A (-48d) | 2026-01-24 → 2025-12-07 A (-48d) |  | 0% → 100% | 55.16d → none | baseline start none → 2026-01-23; baseline finish none → 2026-01-24 |
| 156 | Endpoint: POST /api/auth/register | 2026-01-24 → 2025-12-06 A (-49d) | 2026-01-25 → 2025-12-07 A (-49d) |  | 0% → 100% | 55.16d → none | baseline start none → 2026-01-24; baseline finish none → 2026-01-25 |
| 157 | Endpoint: POST /api/auth/login | 2026-01-25 → 2025-12-06 A (-50d) | 2026-01-26 → 2025-12-07 A (-50d) |  | 0% → 100% | 55.16d → none | baseline start none → 2026-01-25; baseline finish none → 2026-01-26 |
| 158 | Endpoint: POST /api/auth/refresh | 2026-01-26 → 2026-09-25 (+242d) | 2026-01-27 → 2026-09-28 (+244d) | 1d → 3.2d |  | 55.16d → 0d | baseline start none → 2026-01-26; baseline finish none → 2026-01-27 |
| 159 | Endpoint: POST /api/auth/logout | 2026-01-27 → 2026-08-18 A (+203d) | 2026-01-28 → 2026-08-19 A (+203d) |  | 0% → 100% | 55.16d → none | baseline start none → 2026-01-27; baseline finish none → 2026-01-28 |
| 160 | Endpoint: POST /api/auth/reset-password | 2026-01-28 → 2026-08-18 A (+202d) | 2026-01-29 → 2026-08-19 A (+202d) |  | 0% → 100% | 55.16d → none | baseline start none → 2026-01-28; baseline finish none → 2026-01-29 |
| 161 | Implementacja middleware AuthMiddleware | 2026-01-29 → 2026-08-18 A (+201d) | 2026-01-30 → 2026-08-19 A (+201d) |  | 0% → 100% | 55.16d → none | baseline start none → 2026-01-29; baseline finish none → 2026-01-30 |
| 162 | Integracja SMTP (wysyłka maili) | 2026-01-30 → 2026-08-17 A (+199d) | 2026-01-31 → 2026-09-29 (+241d) | 1d → 4d | 0% → 60% | 55.16d → 0d | baseline start none → 2026-01-30; baseline finish none → 2026-01-31 |
| 163 | Testy jednostkowe: AuthController | 2026-01-31 → 2026-08-25 A (+206d) | 2026-02-01 → 2026-08-26 A (+206d) |  | 0% → 100% | 55.16d → none | baseline start none → 2026-01-31; baseline finish none → 2026-02-01 |
| 164 | **Moduł Profilu Użytkownika** | 2026-02-01 → 2026-08-18 A (+198d) | 2026-02-07 → 2026-10-05 (+240d) | 6d → 48.4d | 0% → 40% | 55.16d → 0d | baseline start none → 2026-02-01; baseline finish none → 2026-02-07 |
| 165 | Endpoint: GET /api/me | 2026-02-01 → 2026-08-22 A (+202d) | 2026-02-02 → 2026-08-23 A (+202d) |  | 0% → 100% | 55.16d → none | baseline start none → 2026-02-01; baseline finish none → 2026-02-02 |
| 166 | Endpoint: GET /api/profile/:id | 2026-02-02 → 2026-09-30 (+240d) | 2026-02-03 → 2026-10-01 (+240d) | 1d → 1.6d |  | 55.16d → 0d | baseline start none → 2026-02-02; baseline finish none → 2026-02-03 |
| 167 | Endpoint: PUT /api/profile | 2026-02-03 → 2026-08-22 A (+200d) | 2026-02-04 → 2026-08-23 A (+200d) |  | 0% → 100% | 55.16d → none | baseline start none → 2026-02-03; baseline finish none → 2026-02-04 |
| 168 | Endpoint: PUT /api/profile/password | 2026-02-04 → 2026-08-22 A (+199d) | 2026-02-05 → 2026-08-23 A (+199d) |  | 0% → 100% | 55.16d → none | baseline start none → 2026-02-04; baseline finish none → 2026-02-05 |
| 169 | Integracja Cloudinary (upload avatarów) | 2026-02-05 → 2026-08-18 A (+194d) | 2026-02-06 → 2026-10-03 (+239d) | 1d → 3.2d | 0% → 25% | 55.16d → 0d | baseline start none → 2026-02-05; baseline finish none → 2026-02-06 |
| 170 | Endpoint: GET /api/cloudinary/resources | 2026-02-06 → 2026-10-04 (+240d) | 2026-02-07 → 2026-10-05 (+240d) | 1d → 1.6d |  | 55.16d → 0d | baseline start none → 2026-02-06; baseline finish none → 2026-02-07 |
| 171 | **Moduł Kampanii i Sesji** | 2026-02-07 → 2026-08-18 A (+192d) | 2026-02-14 → 2026-10-07 (+235d) | 7d → 49.2d | 0% → 79% | 55.16d → 0d | baseline start none → 2026-02-07; baseline finish none → 2026-02-14 |
| 172 | Implementacja modelu Session | 2026-02-07 → 2026-08-18 A (+192d) | 2026-02-08 → 2026-08-19 A (+192d) |  | 0% → 100% | 55.16d → none | baseline start none → 2026-02-07; baseline finish none → 2026-02-08 |
| 173 | Endpoint: GET /api/campaigns | 2026-02-08 → 2026-08-18 A (+191d) | 2026-02-09 → 2026-08-19 A (+191d) |  | 0% → 100% | 55.16d → none | baseline start none → 2026-02-08; baseline finish none → 2026-02-09 |
| 174 | Endpoint: POST /api/campaigns | 2026-02-09 → 2026-08-18 A (+190d) | 2026-02-10 → 2026-08-19 A (+190d) |  | 0% → 100% | 55.16d → none | baseline start none → 2026-02-09; baseline finish none → 2026-02-10 |
| 175 | Endpoint: GET /api/campaigns/:id | 2026-02-10 → 2026-08-18 A (+189d) | 2026-02-11 → 2026-08-19 A (+189d) |  | 0% → 100% | 55.16d → none | baseline start none → 2026-02-10; baseline finish none → 2026-02-11 |
| 176 | Endpoint: PUT /api/campaigns/:id | 2026-02-11 → 2026-08-18 A (+188d) | 2026-02-12 → 2026-08-19 A (+188d) |  | 0% → 100% | 55.16d → none | baseline start none → 2026-02-11; baseline finish none → 2026-02-12 |
| 177 | Endpoint: DELETE /api/campaigns/:id | 2026-02-12 → 2026-10-05 (+235d) | 2026-02-13 → 2026-10-07 (+236d) | 1d → 1.6d |  | 55.16d → 0d | baseline start none → 2026-02-12; baseline finish none → 2026-02-13 |
| 178 | Testy jednostkowe: SessionModel | 2026-02-13 → 2026-08-18 A (+186d) | 2026-02-14 → 2026-08-19 A (+186d) |  | 0% → 100% | 55.16d → none | baseline start none → 2026-02-13; baseline finish none → 2026-02-14 |
| 179 | **Moduł Wirtualnych Stołów (Blaty)** | 2026-02-14 → 2026-08-18 A (+185d) | 2026-02-24 → 2026-10-10 (+228d) | 10d → 52.4d | 0% → 71% | 55.16d → 0d | baseline start none → 2026-02-14; baseline finish none → 2026-02-24 |
| 180 | Implementacja modelu Table | 2026-02-14 → 2026-08-18 A (+185d) | 2026-02-15 → 2026-08-19 A (+185d) |  | 0% → 100% | 55.16d → none | baseline start none → 2026-02-14; baseline finish none → 2026-02-15 |
| 181 | Endpoint: GET /api/tables | 2026-02-15 → 2026-08-18 A (+184d) | 2026-02-16 → 2026-08-19 A (+184d) |  | 0% → 100% | 55.16d → none | baseline start none → 2026-02-15; baseline finish none → 2026-02-16 |
| 182 | Endpoint: POST /api/tables | 2026-02-16 → 2026-08-18 A (+183d) | 2026-02-17 → 2026-08-19 A (+183d) |  | 0% → 100% | 55.16d → none | baseline start none → 2026-02-16; baseline finish none → 2026-02-17 |
| 183 | Endpoint: GET /api/tables/:id | 2026-02-17 → 2026-08-18 A (+182d) | 2026-02-18 → 2026-08-19 A (+182d) |  | 0% → 100% | 55.16d → none | baseline start none → 2026-02-17; baseline finish none → 2026-02-18 |
| 184 | Endpoint: PUT /api/tables/:id | 2026-02-18 → 2026-08-18 A (+181d) | 2026-02-19 → 2026-08-19 A (+181d) |  | 0% → 100% | 55.16d → none | baseline start none → 2026-02-18; baseline finish none → 2026-02-19 |
| 185 | Endpoint: DELETE /api/tables/:id | 2026-02-19 → 2026-10-07 (+230d) | 2026-02-20 → 2026-10-08 (+230d) | 1d → 1.6d |  | 55.16d → 0d | baseline start none → 2026-02-19; baseline finish none → 2026-02-20 |
| 186 | Implementacja systemu zaproszeń do stołu | 2026-02-20 → 2026-08-18 A (+179d) | 2026-02-21 → 2026-08-19 A (+179d) |  | 0% → 100% | 55.16d → none | baseline start none → 2026-02-20; baseline finish none → 2026-02-21 |
| 187 | Endpoint: POST /api/tables/:id/invite | 2026-02-21 → 2026-08-18 A (+178d) | 2026-02-22 → 2026-08-19 A (+178d) |  | 0% → 100% | 55.16d → none | baseline start none → 2026-02-21; baseline finish none → 2026-02-22 |
| 188 | Endpoint: POST /api/tables/join | 2026-02-22 → 2026-08-18 A (+177d) | 2026-02-23 → 2026-08-19 A (+177d) |  | 0% → 100% | 55.16d → none | baseline start none → 2026-02-22; baseline finish none → 2026-02-23 |
| 189 | Wysyłka emaila z zaproszeniem (opcjonalne) | 2026-02-23 → 2026-10-08 (+227d) | 2026-02-24 → 2026-10-10 (+228d) | 1d → 1.6d |  | 55.16d → 0d | baseline start none → 2026-02-23; baseline finish none → 2026-02-24 |
| 190 | **Moduł Postaci (Characters)** | 2026-02-24 → 2026-08-18 A (+175d) | 2026-03-04 → 2026-08-19 A (+168d) | 8d → 1d | 0% → 100% | 55.16d → none | baseline start none → 2026-02-24; baseline finish none → 2026-03-04 |
| 191 | Implementacja modelu Character | 2026-02-24 → 2026-08-18 A (+175d) | 2026-02-25 → 2026-08-19 A (+175d) |  | 0% → 100% | 55.16d → none | baseline start none → 2026-02-24; baseline finish none → 2026-02-25 |
| 192 | Endpoint: GET /api/characters | 2026-02-25 → 2026-08-18 A (+174d) | 2026-02-26 → 2026-08-19 A (+174d) |  | 0% → 100% | 55.16d → none | baseline start none → 2026-02-25; baseline finish none → 2026-02-26 |
| 193 | Endpoint: POST /api/characters | 2026-02-26 → 2026-08-18 A (+173d) | 2026-02-27 → 2026-08-19 A (+173d) |  | 0% → 100% | 55.16d → none | baseline start none → 2026-02-26; baseline finish none → 2026-02-27 |
| 194 | Endpoint: GET /api/characters/:id | 2026-02-27 → 2026-08-18 A (+172d) | 2026-02-28 → 2026-08-19 A (+172d) |  | 0% → 100% | 55.16d → none | baseline start none → 2026-02-27; baseline finish none → 2026-02-28 |
| 195 | Endpoint: PUT /api/characters/:id | 2026-02-28 → 2026-08-18 A (+171d) | 2026-03-01 → 2026-08-19 A (+171d) |  | 0% → 100% | 55.16d → none | baseline start none → 2026-02-28; baseline finish none → 2026-03-01 |
| 196 | Endpoint: DELETE /api/characters/:id | 2026-03-01 → 2026-08-18 A (+170d) | 2026-03-02 → 2026-08-19 A (+170d) |  | 0% → 100% | 55.16d → none | baseline start none → 2026-03-01; baseline finish none → 2026-03-02 |
| 197 | System uprawnień do postaci (Permissions) | 2026-03-02 → 2026-08-18 A (+169d) | 2026-03-03 → 2026-08-19 A (+169d) |  | 0% → 100% | 55.16d → none | baseline start none → 2026-03-02; baseline finish none → 2026-03-03 |
| 198 | Endpoint: POST /api/characters/:id/permissions | 2026-03-03 → 2026-08-18 A (+168d) | 2026-03-04 → 2026-08-19 A (+168d) |  | 0% → 100% | 55.16d → none | baseline start none → 2026-03-03; baseline finish none → 2026-03-04 |
| 199 | **Moduł Ekwipunku i Przedmiotów** | 2026-03-04 → 2026-08-11 A (+160d) | 2026-03-14 → 2026-10-18 (+218d) | 10d → 67.8d | 0% → 64% | 55.16d → 0d | baseline start none → 2026-03-04; baseline finish none → 2026-03-14 |
| 200 | Implementacja modelu Item | 2026-03-04 → 2026-08-18 A (+167d) | 2026-03-05 → 2026-08-19 A (+167d) |  | 0% → 100% | 55.16d → none | baseline start none → 2026-03-04; baseline finish none → 2026-03-05 |
| 201 | Implementacja modelu Inventory | 2026-03-05 → 2026-08-18 A (+166d) | 2026-03-06 → 2026-08-19 A (+166d) |  | 0% → 100% | 55.16d → none | baseline start none → 2026-03-05; baseline finish none → 2026-03-06 |
| 202 | Endpoint: GET /api/characters/:id/inventory | 2026-03-06 → 2026-08-18 A (+165d) | 2026-03-07 → 2026-08-19 A (+165d) |  | 0% → 100% | 55.16d → none | baseline start none → 2026-03-06; baseline finish none → 2026-03-07 |
| 203 | Endpoint: POST /api/characters/:id/inventory | 2026-03-07 → 2026-08-18 A (+164d) | 2026-03-08 → 2026-08-19 A (+164d) |  | 0% → 100% | 55.16d → none | baseline start none → 2026-03-07; baseline finish none → 2026-03-08 |
| 204 | Endpoint: PUT /api/inventory/:id | 2026-03-08 → 2026-08-18 A (+163d) | 2026-03-09 → 2026-08-19 A (+163d) |  | 0% → 100% | 55.16d → none | baseline start none → 2026-03-08; baseline finish none → 2026-03-09 |
| 205 | Endpoint: DELETE /api/inventory/:id | 2026-03-09 → 2026-08-18 A (+162d) | 2026-03-10 → 2026-08-19 A (+162d) |  | 0% → 100% | 55.16d → none | baseline start none → 2026-03-09; baseline finish none → 2026-03-10 |
| 206 | System handlu/wymiany (Trading) | 2026-03-10 → 2026-08-11 A (+154d) | 2026-03-11 → 2026-10-12 (+215d) | 1d → 10d | 0% → 80% | 55.16d → 0d | baseline start none → 2026-03-10; baseline finish none → 2026-03-11 |
| 207 | Endpoint: POST /api/trade/offer | 2026-03-11 → 2026-10-12 (+215d) | 2026-03-12 → 2026-10-15 (+217d) | 1d → 3.2d |  | 55.16d → 0d | baseline start none → 2026-03-11; baseline finish none → 2026-03-12 |
| 208 | Endpoint: POST /api/trade/accept | 2026-03-12 → 2026-10-15 (+217d) | 2026-03-13 → 2026-10-18 (+219d) | 1d → 3.2d |  | 55.16d → 0d | baseline start none → 2026-03-12; baseline finish none → 2026-03-13 |
| 209 | Kosz przedmiotów (Soft Delete) | 2026-03-13 → 2026-08-18 A (+158d) | 2026-03-14 → 2026-08-19 A (+158d) |  | 0% → 100% | 55.16d → none | baseline start none → 2026-03-13; baseline finish none → 2026-03-14 |
| 210 | **Moduł Map i Tokenów (VTT Core)** | 2026-03-14 → 2026-08-18 A (+157d) | 2026-03-25 → 2026-10-28 (+217d) | 11d → 70.4d | 0% → 52% | 55.16d → 0d | baseline start none → 2026-03-14; baseline finish none → 2026-03-25 |

| ID | Task | Start | Finish | Duration | Complete | Total float | Other |
| --- | --- | --- | --- | --- | --- | --- | --- |
| 211 | Implementacja modelu Map | 2026-03-14 → 2026-08-18 A (+157d) | 2026-03-15 → 2026-08-19 A (+157d) |  | 0% → 100% | 55.16d → none | baseline start none → 2026-03-14; baseline finish none → 2026-03-15 |
| 212 | Endpoint: POST /api/maps | 2026-03-15 → 2026-08-18 A (+156d) | 2026-03-16 → 2026-08-19 A (+156d) |  | 0% → 100% | 55.16d → none | baseline start none → 2026-03-15; baseline finish none → 2026-03-16 |
| 213 | Endpoint: GET /api/maps/:id | 2026-03-16 → 2026-08-18 A (+155d) | 2026-03-17 → 2026-08-19 A (+155d) |  | 0% → 100% | 55.16d → none | baseline start none → 2026-03-16; baseline finish none → 2026-03-17 |
| 214 | Endpoint: PUT /api/maps/:id | 2026-03-17 → 2026-08-18 A (+154d) | 2026-03-18 → 2026-08-19 A (+154d) |  | 0% → 100% | 55.16d → none | baseline start none → 2026-03-17; baseline finish none → 2026-03-18 |
| 215 | Endpoint: DELETE /api/maps/:id | 2026-03-18 → 2026-08-18 A (+153d) | 2026-03-19 → 2026-08-19 A (+153d) |  | 0% → 100% | 55.16d → none | baseline start none → 2026-03-18; baseline finish none → 2026-03-19 |
| 216 | Implementacja modelu Token | 2026-03-19 → 2026-08-23 A (+157d) | 2026-03-20 → 2026-08-24 A (+157d) |  | 0% → 100% | 55.16d → none | baseline start none → 2026-03-19; baseline finish none → 2026-03-20 |
| 217 | Endpoint: POST /api/tokens | 2026-03-20 → 2026-08-23 A (+156d) | 2026-03-21 → 2026-08-24 A (+156d) |  | 0% → 100% | 55.16d → none | baseline start none → 2026-03-20; baseline finish none → 2026-03-21 |
| 218 | Endpoint: PUT /api/tokens/:id | 2026-03-21 → 2026-08-23 A (+155d) | 2026-03-22 → 2026-08-24 A (+155d) |  | 0% → 100% | 55.16d → none | baseline start none → 2026-03-21; baseline finish none → 2026-03-22 |
| 219 | Endpoint: DELETE /api/tokens/:id | 2026-03-22 → 2026-08-23 A (+154d) | 2026-03-23 → 2026-08-24 A (+154d) |  | 0% → 100% | 55.16d → none | baseline start none → 2026-03-22; baseline finish none → 2026-03-23 |
| 220 | System Fog of War (backend state) | 2026-03-23 → 2026-08-23 A (+153d) | 2026-03-24 → 2026-10-25 (+215d) | 1d → 8d | 0% → 20% | 55.16d → 0d | baseline start none → 2026-03-23; baseline finish none → 2026-03-24 |
| 221 | Endpoint: PUT /api/maps/:id/fog | 2026-03-24 → 2026-10-25 (+215d) | 2026-03-25 → 2026-10-28 (+217d) | 1d → 3.2d |  | 55.16d → 0d | baseline start none → 2026-03-24; baseline finish none → 2026-03-25 |
| 222 | **Moduł Czatu (Real-Time Messaging)** | 2026-03-25 → 2026-08-18 A (+146d) | 2026-04-08 → 2026-11-03 (+209d) | 9d → 77.4d | 0% → 57% | 55.16d → 0d | baseline start none → 2026-03-25; baseline finish none → 2026-04-08 |
| 223 | Implementacja modelu ChatMessage | 2026-03-25 → 2026-08-18 A (+146d) | 2026-03-26 → 2026-08-19 A (+146d) |  | 0% → 100% | 55.16d → none | baseline start none → 2026-03-25; baseline finish none → 2026-03-26 |
| 224 | Endpoint: GET /api/tables/:id/messages | 2026-03-26 → 2026-08-18 A (+145d) | 2026-03-27 → 2026-08-19 A (+145d) |  | 0% → 100% | 55.16d → none | baseline start none → 2026-03-26; baseline finish none → 2026-03-27 |
| 225 | Endpoint: POST /api/tables/:id/messages | 2026-03-27 → 2026-08-18 A (+144d) | 2026-03-28 → 2026-08-19 A (+144d) |  | 0% → 100% | 55.16d → none | baseline start none → 2026-03-27; baseline finish none → 2026-03-28 |
| 226 | Implementacja serwera WebSocket (Socket.io) | 2026-03-28 → 2026-08-18 A (+143d) | 2026-03-29 → 2026-08-19 A (+143d) |  | 0% → 100% | 55.16d → none | baseline start none → 2026-03-28; baseline finish none → 2026-03-29 |
| 227 | WebSocket Event: join_table | 2026-03-29 → 2026-08-18 A (+142d) | 2026-03-30 → 2026-08-19 A (+142d) |  | 0% → 100% | 55.16d → none | baseline start none → 2026-03-29; baseline finish none → 2026-03-30 |
| 228 | WebSocket Event: chat_message | 2026-03-30 → 2026-08-18 A (+141d) | 2026-03-31 → 2026-08-19 A (+141d) |  | 0% → 100% | 55.16d → none | baseline start none → 2026-03-30; baseline finish none → 2026-03-31 |
| 229 | WebSocket Event: private_message | 2026-03-31 → 2026-10-28 (+211d) | 2026-04-01 → 2026-11-01 (+214d) | 1d → 4d |  | 55.16d → 0d | baseline start none → 2026-03-31; baseline finish none → 2026-04-01 |
| 230 | Middleware WebSocket: JWT Authentication | 2026-04-01 → 2026-08-18 A (+139d) | 2026-04-02 → 2026-08-19 A (+139d) |  | 0% → 100% | 55.16d → none | baseline start none → 2026-04-01; baseline finish none → 2026-04-02 |
| 231 | Buffer wiadomości (ostatnie 500 per stół) | 2026-04-02 → 2026-08-18 A (+138d) | 2026-04-08 → 2026-11-03 (+209d) | 1d → 4d | 0% → 40% | 55.16d → 0d | baseline start none → 2026-04-02; baseline finish none → 2026-04-08 |
| 232 | **Moduł Rzutów Kośćmi (Dice Roller)** | 2026-04-08 → 2025-12-21 A (-108d) | 2026-04-17 → 2026-11-24 (+221d) | 9d → 320.67d | 0% → 9% | 55.16d → 0d | baseline start none → 2026-04-08; baseline finish none → 2026-04-17 |
| 233 | Implementacja modelu DiceRoll | 2026-04-08 → 2026-11-03 (+209d) | 2026-04-09 → 2026-11-05 (+210d) | 1d → 1.6d |  | 55.16d → 0d | baseline start none → 2026-04-08; baseline finish none → 2026-04-09 |
| 234 | Biblioteka parsowania formuł dice | 2026-04-09 → 2025-12-21 A (-109d) | 2026-04-10 → 2025-12-22 A (-109d) |  | 0% → 100% | 55.16d → none | baseline start none → 2026-04-09; baseline finish none → 2026-04-10 |
| 235 | Endpoint: POST /api/dice/roll | 2026-04-10 → 2026-11-05 (+209d) | 2026-04-11 → 2026-11-07 (+210d) | 1d → 2.4d |  | 55.16d → 0d | baseline start none → 2026-04-10; baseline finish none → 2026-04-11 |
| 236 | Endpoint: GET /api/tables/:id/rolls | 2026-04-11 → 2026-11-07 (+210d) | 2026-04-12 → 2026-11-09 (+211d) | 1d → 1.6d |  | 55.16d → 0d | baseline start none → 2026-04-11; baseline finish none → 2026-04-12 |
| 237 | WebSocket Event: dice_roll | 2026-04-12 → 2026-11-09 (+211d) | 2026-04-13 → 2026-11-12 (+213d) | 1d → 3.2d |  | 55.16d → 0d | baseline start none → 2026-04-12; baseline finish none → 2026-04-13 |
| 238 | Implementacja rzutów zaawansowanych (przewaga/utrudnienie D&D 5e) | 2026-04-13 → 2025-12-21 A (-113d) | 2026-04-14 → 2026-11-14 (+214d) | 1d → 2.67d | 0% → 40% | 55.16d → 0d | baseline start none → 2026-04-13; baseline finish none → 2026-04-14 |
| 239 | System makr rzutów | 2026-04-14 → 2026-11-14 (+214d) | 2026-04-15 → 2026-11-20 (+219d) | 1d → 6.4d |  | 55.16d → 0d | baseline start none → 2026-04-14; baseline finish none → 2026-04-15 |
| 240 | Endpoint: GET /api/macros | 2026-04-15 → 2026-11-20 (+219d) | 2026-04-16 → 2026-11-22 (+220d) | 1d → 1.6d |  | 55.16d → 0d | baseline start none → 2026-04-15; baseline finish none → 2026-04-16 |
| 241 | Endpoint: POST /api/macros/:id/execute | 2026-04-16 → 2026-11-22 (+220d) | 2026-04-17 → 2026-11-24 (+221d) | 1d → 2.4d |  | 55.16d → 0d | baseline start none → 2026-04-16; baseline finish none → 2026-04-17 |
| 242 | **Moduł Panelu Admina** | 2026-04-17 → 2026-08-22 A (+127d) | 2026-04-22 → 2026-11-26 (+218d) | 5d → 95.2d | 0% → 71% | 55.16d → 0d | baseline start none → 2026-04-17; baseline finish none → 2026-04-22 |
| 243 | Endpoint: GET /api/admin/stats | 2026-04-17 → 2026-08-22 A (+127d) | 2026-04-18 → 2026-08-23 A (+127d) |  | 0% → 100% | 55.16d → none | baseline start none → 2026-04-17; baseline finish none → 2026-04-18 |
| 244 | Endpoint: GET /api/admin/users | 2026-04-18 → 2026-08-22 A (+126d) | 2026-04-19 → 2026-08-23 A (+126d) |  | 0% → 100% | 55.16d → none | baseline start none → 2026-04-18; baseline finish none → 2026-04-19 |
| 245 | Endpoint: PUT /api/admin/users/:id | 2026-04-19 → 2026-08-22 A (+125d) | 2026-04-20 → 2026-08-23 A (+125d) |  | 0% → 100% | 55.16d → none | baseline start none → 2026-04-19; baseline finish none → 2026-04-20 |
| 246 | Endpoint: DELETE /api/admin/users/:id | 2026-04-20 → 2026-11-24 (+218d) | 2026-04-21 → 2026-11-26 (+219d) | 1d → 1.6d |  | 55.16d → 0d | baseline start none → 2026-04-20; baseline finish none → 2026-04-21 |
| 247 | Middleware: AdminMiddleware | 2026-04-21 → 2026-08-22 A (+123d) | 2026-04-22 → 2026-08-23 A (+123d) |  | 0% → 100% | 55.16d → none | baseline start none → 2026-04-21; baseline finish none → 2026-04-22 |
| 248 | **Warstwa Front-End: Struktura Aplikacji** | 2026-04-22 → 2025-12-03 A (-140d) | 2026-04-29 → 2025-12-04 A (-146d) | 7d → 1d | 0% → 100% | 55.16d → none | baseline start none → 2026-04-22; baseline finish none → 2026-04-29 |
| 249 | Inicjalizacja projektu Vue 3 (webpack) | 2026-04-22 → 2025-12-03 A (-140d) | 2026-04-23 → 2025-12-04 A (-140d) |  | 0% → 100% | 55.16d → none | baseline start none → 2026-04-22; baseline finish none → 2026-04-23 |
| 250 | Instalacja zależności: Vue Router | 2026-04-23 → 2025-12-03 A (-141d) | 2026-04-24 → 2025-12-04 A (-141d) |  | 0% → 100% | 55.16d → none | baseline start none → 2026-04-23; baseline finish none → 2026-04-24 |
| 251 | Instalacja zależności: Vuex (State Management) | 2026-04-24 → 2025-12-03 A (-142d) | 2026-04-25 → 2025-12-04 A (-142d) |  | 0% → 100% | 55.16d → none | baseline start none → 2026-04-24; baseline finish none → 2026-04-25 |
| 252 | Instalacja zależności: Axios (HTTP Client) | 2026-04-25 → 2025-12-03 A (-143d) | 2026-04-26 → 2025-12-04 A (-143d) |  | 0% → 100% | 55.16d → none | baseline start none → 2026-04-25; baseline finish none → 2026-04-26 |
| 253 | Client | 2026-04-26 → 2025-12-03 A (-144d) | 2026-04-27 → 2025-12-04 A (-144d) |  | 0% → 100% | 55.16d → none | baseline start none → 2026-04-26; baseline finish none → 2026-04-27 |
| 254 | Konfiguracja Vite Proxy (dev server) | 2026-04-27 → 2025-12-03 A (-145d) | 2026-04-28 → 2025-12-04 A (-145d) |  | 0% → 100% | 55.16d → none | baseline start none → 2026-04-27; baseline finish none → 2026-04-28 |
| 255 | Struktura katalogów projektu | 2026-04-28 → 2025-12-03 A (-146d) | 2026-04-29 → 2025-12-04 A (-146d) |  | 0% → 100% | 55.16d → none | baseline start none → 2026-04-28; baseline finish none → 2026-04-29 |
| 256 | **Front-End: Moduł Uwierzytelniania (UI)** | 2026-04-29 → 2026-08-22 A (+115d) | 2026-05-05 → 2026-11-28 (+207d) | 6d → 97.6d | 0% → 68% | 55.16d → 0d | baseline start none → 2026-04-29; baseline finish none → 2026-05-05 |
| 257 | Komponent: LoginPage.vue | 2026-04-29 → 2026-08-22 A (+115d) | 2026-04-30 → 2026-08-23 A (+115d) |  | 0% → 100% | 55.16d → none | baseline start none → 2026-04-29; baseline finish none → 2026-04-30 |
| 258 | Komponent: RegisterPage.vue | 2026-04-30 → 2026-08-22 A (+114d) | 2026-05-01 → 2026-08-23 A (+114d) |  | 0% → 100% | 55.16d → none | baseline start none → 2026-04-30; baseline finish none → 2026-05-01 |
| 259 | Komponent: ResetPasswordPage.vue | 2026-05-01 → 2026-08-22 A (+113d) | 2026-05-02 → 2026-08-23 A (+113d) |  | 0% → 100% | 55.16d → none | baseline start none → 2026-05-01; baseline finish none → 2026-05-02 |
| 260 | Store Vuex: authStore | 2026-05-02 → 2026-08-22 A (+112d) | 2026-05-03 → 2026-08-23 A (+112d) |  | 0% → 100% | 55.16d → none | baseline start none → 2026-05-02; baseline finish none → 2026-05-03 |
| 261 | Axios Interceptor: JWT Auto-refresh | 2026-05-03 → 2026-11-26 (+207d) | 2026-05-04 → 2026-11-28 (+208d) | 1d → 2.4d |  | 55.16d → 0d | baseline start none → 2026-05-03; baseline finish none → 2026-05-04 |
| 262 | Router Guard: requireAuth | 2026-05-04 → 2026-08-22 A (+110d) | 2026-05-05 → 2026-08-23 A (+110d) |  | 0% → 100% | 55.16d → none | baseline start none → 2026-05-04; baseline finish none → 2026-05-05 |
| 263 | **Front-End: Dashboard i Nawigacja** | 2026-05-05 A → 2026-08-22 A (+109d) | 2026-05-12 → 2026-08-23 A (+103d) | 7d → 1d | 14% → 100% | 54.16d → none | baseline start none → 2026-05-05; baseline finish none → 2026-05-12 |
| 264 | Komponent: HomeView.vue | 2026-05-06 A → 2026-08-22 A (+108d) | 2026-05-07 A → 2026-08-23 A (+108d) |  |  |  | baseline start none → 2026-05-06; baseline finish none → 2026-05-07 |
| 265 | Komponent: AppLayout.vue | 2026-05-05 → 2026-08-22 A (+109d) | 2026-05-06 → 2026-08-23 A (+109d) |  | 0% → 100% | 55.16d → none | baseline start none → 2026-05-05; baseline finish none → 2026-05-06 |
| 266 | Komponent: Navbar.vue | 2026-05-07 → 2026-08-22 A (+107d) | 2026-05-08 → 2026-08-23 A (+107d) |  | 0% → 100% | 54.16d → none | baseline start none → 2026-05-07; baseline finish none → 2026-05-08 |
| 267 | Komponent: Sidebar.vue | 2026-05-08 → 2026-08-22 A (+106d) | 2026-05-09 → 2026-08-23 A (+106d) |  | 0% → 100% | 54.16d → none | baseline start none → 2026-05-08; baseline finish none → 2026-05-09 |
| 268 | Strona: DashboardPage.vue | 2026-05-09 → 2026-08-22 A (+105d) | 2026-05-10 → 2026-08-23 A (+105d) |  | 0% → 100% | 54.16d → none | baseline start none → 2026-05-09; baseline finish none → 2026-05-10 |
| 269 | Strona 404 | 2026-05-10 → 2026-08-22 A (+104d) | 2026-05-11 → 2026-08-23 A (+104d) |  | 0% → 100% | 54.16d → none | baseline start none → 2026-05-10; baseline finish none → 2026-05-11 |
| 270 | Strona 403 | 2026-05-11 → 2026-08-22 A (+103d) | 2026-05-12 → 2026-08-23 A (+103d) |  | 0% → 100% | 54.16d → none | baseline start none → 2026-05-11; baseline finish none → 2026-05-12 |
| 271 | **Front-End: Moduł Kampanii** | 2026-05-12 → 2026-08-22 A (+102d) | 2026-05-17 → 2026-08-23 A (+98d) | 5d → 1d | 0% → 100% | 54.16d → none | baseline start none → 2026-05-12; baseline finish none → 2026-05-17 |
| 272 | Strona: CampaignsListPage.vue | 2026-05-12 → 2026-08-22 A (+102d) | 2026-05-13 → 2026-08-23 A (+102d) |  | 0% → 100% | 54.16d → none | baseline start none → 2026-05-12; baseline finish none → 2026-05-13 |
| 273 | Komponent: CampaignCard.vue | 2026-05-13 → 2026-08-22 A (+101d) | 2026-05-14 → 2026-08-23 A (+101d) |  | 0% → 100% | 54.16d → none | baseline start none → 2026-05-13; baseline finish none → 2026-05-14 |
| 274 | Strona: CampaignCreatePage.vue | 2026-05-14 → 2026-08-22 A (+100d) | 2026-05-15 → 2026-08-23 A (+100d) |  | 0% → 100% | 54.16d → none | baseline start none → 2026-05-14; baseline finish none → 2026-05-15 |
| 275 | Strona: CampaignDetailsPage.vue | 2026-05-15 → 2026-08-22 A (+99d) | 2026-05-16 → 2026-08-23 A (+99d) |  | 0% → 100% | 54.16d → none | baseline start none → 2026-05-15; baseline finish none → 2026-05-16 |
| 276 | Store Vuex: campaignsStore | 2026-05-16 → 2026-08-22 A (+98d) | 2026-05-17 → 2026-08-23 A (+98d) |  | 0% → 100% | 54.16d → none | baseline start none → 2026-05-16; baseline finish none → 2026-05-17 |
| 277 | **Front-End: Moduł Wirtualnego Stołu (VTT UI)** | 2026-05-17 → 2026-08-13 A (+88d) | 2026-05-31 → 2026-12-07 (+190d) | 14d → 116d | 0% → 75% | 54.16d → 0d | baseline start none → 2026-05-17; baseline finish none → 2026-05-31 |
| 278 | Strona: TableRoomPage.vue | 2026-05-17 → 2026-08-22 A (+97d) | 2026-05-18 → 2026-08-23 A (+97d) |  | 0% → 100% | 54.16d → none | baseline start none → 2026-05-17; baseline finish none → 2026-05-18 |
| 279 | Komponent: MapCanvas.vue | 2026-05-18 → 2026-08-23 A (+97d) | 2026-05-19 → 2026-08-24 A (+97d) |  | 0% → 100% | 54.16d → none | baseline start none → 2026-05-18; baseline finish none → 2026-05-19 |
| 280 | Komponent: TokenLayer.vue | 2026-05-19 → 2026-08-23 A (+96d) | 2026-05-20 → 2026-08-24 A (+96d) |  | 0% → 100% | 54.16d → none | baseline start none → 2026-05-19; baseline finish none → 2026-05-20 |

| ID | Task | Start | Finish | Duration | Complete | Total float | Other |
| --- | --- | --- | --- | --- | --- | --- | --- |
| 281 | Komponent: GridLayer.vue | 2026-05-20 → 2026-08-23 A (+95d) | 2026-05-21 → 2026-08-24 A (+95d) |  | 0% → 100% | 54.16d → none | baseline start none → 2026-05-20; baseline finish none → 2026-05-21 |
| 282 | Komponent: FogOfWarLayer.vue | 2026-05-21 → 2026-08-26 A (+97d) | 2026-05-22 → 2026-12-04 (+196d) | 1d → 7.11d | 0% → 10% | 54.16d → 0d | baseline start none → 2026-05-21; baseline finish none → 2026-05-22 |
| 283 | Komponent: DrawingToolbar.vue | 2026-05-22 → 2026-08-25 A (+95d) | 2026-05-23 → 2026-08-26 A (+95d) |  | 0% → 100% | 54.16d → none | baseline start none → 2026-05-22; baseline finish none → 2026-05-23 |
| 284 | Komponent: Sidebar.vue (w grze) | 2026-05-23 → 2026-08-25 A (+94d) | 2026-05-24 → 2026-08-26 A (+94d) |  | 0% → 100% | 54.16d → none | baseline start none → 2026-05-23; baseline finish none → 2026-05-24 |
| 285 | Komponent: ChatPanel.vue | 2026-05-24 → 2026-08-25 A (+93d) | 2026-05-25 → 2026-08-26 A (+93d) |  | 0% → 100% | 54.16d → none | baseline start none → 2026-05-24; baseline finish none → 2026-05-25 |
| 286 | Komponent: DiceRollerWidget.vue | 2026-05-25 → 2026-08-25 A (+92d) | 2026-05-26 → 2026-08-26 A (+92d) |  | 0% → 100% | 54.16d → none | baseline start none → 2026-05-25; baseline finish none → 2026-05-26 |
| 287 | Komponent: CharacterSheetModal.vue | 2026-05-26 → 2026-08-25 A (+91d) | 2026-05-27 → 2026-08-26 A (+91d) |  | 0% → 100% | 54.16d → none | baseline start none → 2026-05-26; baseline finish none → 2026-05-27 |
| 288 | Komponent: InventoryPanel.vue | 2026-05-27 → 2026-08-25 A (+90d) | 2026-05-28 → 2026-08-26 A (+90d) |  | 0% → 100% | 54.16d → none | baseline start none → 2026-05-27; baseline finish none → 2026-05-28 |
| 289 | Komponent: InitiativeTracker.vue | 2026-05-28 → 2026-08-13 A (+77d) | 2026-05-29 → 2026-12-07 (+192d) | 1d → 16d | 0% → 85% | 54.16d → 0d | baseline start none → 2026-05-28; baseline finish none → 2026-05-29 |
| 290 | Store Vuex: gameStore | 2026-05-29 → 2026-08-25 A (+88d) | 2026-05-30 → 2026-08-26 A (+88d) |  | 0% → 100% | 54.16d → none | baseline start none → 2026-05-29; baseline finish none → 2026-05-30 |
| 291 | WebSocket Service: Integration | 2026-05-30 → 2026-08-25 A (+87d) | 2026-05-31 → 2026-08-26 A (+87d) |  | 0% → 100% | 54.16d → none | baseline start none → 2026-05-30; baseline finish none → 2026-05-31 |
| 292 | **Front-End: Moduł Profilu** | 2026-05-31 → 2026-08-22 A (+83d) | 2026-06-04 → 2026-12-09 (+188d) | 4d → 108.8d | 0% → 61% | 54.16d → 0d | baseline start none → 2026-05-31; baseline finish none → 2026-06-04 |
| 293 | Strona: ProfilePage.vue | 2026-05-31 → 2026-08-22 A (+83d) | 2026-06-01 → 2026-08-23 A (+83d) |  | 0% → 100% | 54.16d → none | baseline start none → 2026-05-31; baseline finish none → 2026-06-01 |
| 294 | Komponent: AvatarUpload.vue | 2026-06-01 → 2026-08-23 A (+83d) | 2026-06-02 → 2026-12-09 (+190d) | 1d → 3.2d | 0% → 25% | 54.16d → 0d | baseline start none → 2026-06-01; baseline finish none → 2026-06-02 |
| 295 | Strona: SettingsPage.vue | 2026-06-02 → 2026-08-22 A (+81d) | 2026-06-03 → 2026-08-23 A (+81d) |  | 0% → 100% | 54.16d → none | baseline start none → 2026-06-02; baseline finish none → 2026-06-03 |
| 296 | Store Vuex: userStore | 2026-06-03 → 2026-08-22 A (+80d) | 2026-06-04 → 2026-08-23 A (+80d) |  | 0% → 100% | 54.16d → none | baseline start none → 2026-06-03; baseline finish none → 2026-06-04 |
| 297 | **Lokalizacja i i18n** | 2026-06-04 → 2026-01-16 A (-139d) | 2026-06-08 → 2026-01-17 A (-142d) | 4d → 1d | 0% → 100% | 54.16d → none | baseline start none → 2026-06-04; baseline finish none → 2026-06-08 |
| 298 | Instalacja biblioteki Vue I18n | 2026-06-04 → 2026-01-16 A (-139d) | 2026-06-05 → 2026-01-17 A (-139d) |  | 0% → 100% | 54.16d → none | baseline start none → 2026-06-04; baseline finish none → 2026-06-05 |
| 299 | pl.json | 2026-06-05 → 2026-01-16 A (-140d) | 2026-06-06 → 2026-01-17 A (-140d) |  | 0% → 100% | 54.16d → none | baseline start none → 2026-06-05; baseline finish none → 2026-06-06 |
| 300 | Endpoint: GET /api/i18n/:lang | 2026-06-06 → 2026-01-16 A (-141d) | 2026-06-07 → 2026-01-17 A (-141d) |  | 0% → 100% | 54.16d → none | baseline start none → 2026-06-06; baseline finish none → 2026-06-07 |
| 301 | Selector języka w Navbar | 2026-06-07 → 2026-01-16 A (-142d) | 2026-06-08 → 2026-01-17 A (-142d) |  | 0% → 100% | 54.16d → none | baseline start none → 2026-06-07; baseline finish none → 2026-06-08 |
| 302 | **Zaawansowane funkcjonalności aplikacji** | 2026-06-08 → 2026-08-22 A (+75d) | 2026-06-12 → 2026-12-27 (+198d) | 4d → 126.4d | 0% → 5% | 54.16d → 0d | baseline start none → 2026-06-08; baseline finish none → 2026-06-12 |
| 303 | **Front-End: Moduł Zaawansowany (Opcjonalny)** | 2026-06-08 → 2026-08-22 A (+75d) | 2026-06-12 → 2026-12-27 (+198d) | 4d → 126.4d | 0% → 5% | 54.16d → 0d | baseline start none → 2026-06-08; baseline finish none → 2026-06-12 |
| 304 | (Jitsi Embed) | 2026-06-08 → 2026-12-09 (+184d) | 2026-06-09 → 2026-12-17 (+191d) | 1d → 8d |  | 54.16d → 0d | baseline start none → 2026-06-08; baseline finish none → 2026-06-09 |
| 305 | Strona: MacrosPage.vue | 2026-06-09 → 2026-12-17 (+191d) | 2026-06-10 → 2026-12-22 (+195d) | 1d → 4.8d |  | 54.16d → 0d | baseline start none → 2026-06-09; baseline finish none → 2026-06-10 |
| 306 | Komponent: MacroEditor.vue | 2026-06-10 → 2026-12-22 (+195d) | 2026-06-11 → 2026-12-27 (+199d) | 1d → 4.8d |  | 54.16d → 0d | baseline start none → 2026-06-10; baseline finish none → 2026-06-11 |
| 307 | Strona: AdminPanel.vue | 2026-06-11 → 2026-08-22 A (+72d) | 2026-06-12 → 2026-08-23 A (+72d) |  | 0% → 100% | 54.16d → none | baseline start none → 2026-06-11; baseline finish none → 2026-06-12 |
| 308 | Etap testów i wdrożenia | 2026-06-12 → 2026-12-27 (+198d) | 2026-06-13 → 2026-12-28 (+198d) | 1d → 1.6d |  | 54.16d → 0d | baseline start none → 2026-06-12; baseline finish none → 2026-06-13 |
| 309 | **Testy Jednostkowe Backend** | 2026-06-13 → 2026-08-25 A (+73d) | 2026-06-20 → 2027-01-01 (+195d) | 7d → 129d | 0% → 56% | 54.16d → 0d | baseline start none → 2026-06-13; baseline finish none → 2026-06-20 |
| 310 | Setup PHPUnit w projekcie | 2026-06-13 → 2026-08-25 A (+73d) | 2026-06-14 → 2026-08-26 A (+73d) |  | 0% → 100% | 54.16d → none | baseline start none → 2026-06-13; baseline finish none → 2026-06-14 |
| 311 | Testy: AuthController | 2026-06-14 → 2026-08-25 A (+72d) | 2026-06-15 → 2026-08-26 A (+72d) |  | 0% → 100% | 54.16d → none | baseline start none → 2026-06-14; baseline finish none → 2026-06-15 |
| 312 | Testy: CampaignsController | 2026-06-15 → 2026-08-25 A (+71d) | 2026-06-16 → 2026-08-26 A (+71d) |  | 0% → 100% | 54.16d → none | baseline start none → 2026-06-15; baseline finish none → 2026-06-16 |
| 313 | Testy: TablesController | 2026-06-16 → 2026-08-25 A (+70d) | 2026-06-17 → 2026-08-26 A (+70d) |  | 0% → 100% | 54.16d → none | baseline start none → 2026-06-16; baseline finish none → 2026-06-17 |
| 314 | Testy: CharactersController | 2026-06-17 → 2026-08-25 A (+69d) | 2026-06-18 → 2026-08-26 A (+69d) |  | 0% → 100% | 54.16d → none | baseline start none → 2026-06-17; baseline finish none → 2026-06-18 |
| 315 | Testy: DiceRoller Service | 2026-06-18 → 2026-12-29 (+194d) | 2026-06-19 → 2026-12-31 (+195d) | 1d → 2.4d |  | 54.16d → 0d | baseline start none → 2026-06-18; baseline finish none → 2026-06-19 |
| 316 | Raport coverage PHPUnit | 2026-06-19 → 2026-12-31 (+195d) | 2026-06-20 → 2027-01-01 (+195d) | 1d → 1.6d |  | 54.16d → 0d | baseline start none → 2026-06-19; baseline finish none → 2026-06-20 |
| 317 | **Testy Jednostkowe Frontend** | 2026-06-20 → 2026-08-25 A (+66d) | 2026-06-24 → 2026-08-26 A (+63d) | 4d → 1d | 0% → 100% | 54.16d → none | baseline start none → 2026-06-20; baseline finish none → 2026-06-24 |
| 318 | Setup Vitest w projekcie | 2026-06-20 → 2026-08-25 A (+66d) | 2026-06-21 → 2026-08-26 A (+66d) |  | 0% → 100% | 54.16d → none | baseline start none → 2026-06-20; baseline finish none → 2026-06-21 |
| 319 | Testy: authStore | 2026-06-21 → 2026-08-25 A (+65d) | 2026-06-22 → 2026-08-26 A (+65d) |  | 0% → 100% | 54.16d → none | baseline start none → 2026-06-21; baseline finish none → 2026-06-22 |
| 320 | Testy: componenty Vue (przykładowe) | 2026-06-22 → 2026-08-25 A (+64d) | 2026-06-23 → 2026-08-26 A (+64d) |  | 0% → 100% | 54.16d → none | baseline start none → 2026-06-22; baseline finish none → 2026-06-23 |
| 321 | Testy: WebSocket Service | 2026-06-23 → 2026-08-25 A (+63d) | 2026-06-24 → 2026-08-26 A (+63d) |  | 0% → 100% | 54.16d → none | baseline start none → 2026-06-23; baseline finish none → 2026-06-24 |
| 322 | **Testy E2E (End-to-End)** | 2026-06-24 → 2027-01-02 (+192d) | 2026-06-29 → 2027-01-17 (+202d) | 5d → 16d |  | 54.16d → 0d | baseline start none → 2026-06-24; baseline finish none → 2026-06-29 |
| 323 | Setup Cypress w projekcie | 2026-06-24 → 2027-01-02 (+192d) | 2026-06-25 → 2027-01-03 (+192d) | 1d → 1.6d |  | 54.16d → 0d | baseline start none → 2026-06-24; baseline finish none → 2026-06-25 |
| 324 | Test E2E: User Registration Flow | 2026-06-25 → 2027-01-03 (+192d) | 2026-06-26 → 2027-01-06 (+194d) | 1d → 3.2d |  | 54.16d → 0d | baseline start none → 2026-06-25; baseline finish none → 2026-06-26 |
| 325 | Test E2E: Login → Create Campaign → Join Table | 2026-06-26 → 2027-01-06 (+194d) | 2026-06-27 → 2027-01-11 (+198d) | 1d → 4.8d |  | 54.16d → 0d | baseline start none → 2026-06-26; baseline finish none → 2026-06-27 |
| 326 | Test E2E: Dice Roll w grze | 2026-06-27 → 2027-01-11 (+198d) | 2026-06-28 → 2027-01-14 (+200d) | 1d → 3.2d |  | 54.16d → 0d | baseline start none → 2026-06-27; baseline finish none → 2026-06-28 |
| 327 | Test E2E: Chat Real-Time | 2026-06-28 → 2027-01-14 (+200d) | 2026-06-29 → 2027-01-17 (+202d) | 1d → 3.2d |  | 54.16d → 0d | baseline start none → 2026-06-28; baseline finish none → 2026-06-29 |
| 328 | **Testy Wydajnościowe** | 2026-06-29 → 2027-01-18 (+203d) | 2026-07-03 → 2027-01-29 (+210d) | 4d → 12d |  | 54.16d → 0d | baseline start none → 2026-06-29; baseline finish none → 2026-07-03 |
| 329 | Setup narzędzia k6 lub Apache JMeter | 2026-06-29 → 2027-01-18 (+203d) | 2026-06-30 → 2027-01-19 (+203d) | 1d → 1.6d |  | 54.16d → 0d | baseline start none → 2026-06-29; baseline finish none → 2026-06-30 |
| 330 | Test: 50 równoczesnych połączeń WebSocket | 2026-06-30 → 2027-01-19 (+203d) | 2026-07-01 → 2027-01-24 (+207d) | 1d → 4.8d |  | 54.16d → 0d | baseline start none → 2026-06-30; baseline finish none → 2026-07-01 |
| 331 | Test: API Throughput (requests/sec) | 2026-07-01 → 2027-01-24 (+207d) | 2026-07-02 → 2027-01-27 (+209d) | 1d → 3.2d |  | 54.16d → 0d | baseline start none → 2026-07-01; baseline finish none → 2026-07-02 |
| 332 | Analiza wyników i optymalizacja | 2026-07-02 → 2027-01-27 (+209d) | 2026-07-03 → 2027-01-29 (+210d) | 1d → 2.4d |  | 54.16d → 0d | baseline start none → 2026-07-02; baseline finish none → 2026-07-03 |
| 333 | **Optymalizacja i Refactoring** | 2026-07-03 → 2026-08-20 A (+48d) | 2026-07-09 → 2027-02-16 (+222d) | 6d → 180d | 0% → 59% | 54.16d → 0d | baseline start none → 2026-07-03; baseline finish none → 2026-07-09 |
| 334 | Code Review: Backend | 2026-07-03 → 2026-08-20 A (+48d) | 2026-07-04 → 2027-02-02 (+213d) | 1d → 10d | 0% → 60% | 54.16d → 0d | baseline start none → 2026-07-03; baseline finish none → 2026-07-04 |
| 335 | Code Review: Frontend | 2026-07-04 → 2026-08-20 A (+47d) | 2026-07-05 → 2027-02-06 (+216d) | 1d → 10d | 0% → 60% | 54.16d → 0d | baseline start none → 2026-07-04; baseline finish none → 2026-07-05 |
| 336 | Refactoring: usunięcie dead code | 2026-07-05 → 2026-08-23 A (+49d) | 2026-07-06 → 2027-02-11 (+220d) | 1d → 8d | 0% → 40% | 54.16d → 0d | baseline start none → 2026-07-05; baseline finish none → 2026-07-06 |
| 337 | Optymalizacja zapytań SQL | 2026-07-06 → 2026-08-23 A (+48d) | 2026-07-07 → 2027-02-14 (+222d) | 1d → 6.4d | 0% → 50% | 54.16d → 0d | baseline start none → 2026-07-06; baseline finish none → 2026-07-07 |
| 338 | Lazy Loading komponentów Vue | 2026-07-07 → 2026-08-25 A (+49d) | 2026-07-08 → 2026-08-26 A (+49d) |  | 0% → 100% | 54.16d → none | baseline start none → 2026-07-07; baseline finish none → 2026-07-08 |
| 339 | Optymalizacja obrazów (Cloudinary) | 2026-07-08 → 2026-08-20 A (+43d) | 2026-07-09 → 2027-02-16 (+222d) | 1d → 8d | 0% → 80% | 54.16d → 0d | baseline start none → 2026-07-08; baseline finish none → 2026-07-09 |
| 340 | **Przygotowanie Wersji Beta** | 2026-07-09 → 2027-02-16 (+222d) | 2026-07-15 → 2027-03-20 (+248d) | 6d → 32d |  | 54.16d → 0d | baseline start none → 2026-07-09; baseline finish none → 2026-07-15 |
| 341 | Konfiguracja serwera staging (beta.blatyrpg.pl) | 2026-07-09 → 2027-02-16 (+222d) | 2026-07-10 → 2027-02-21 (+226d) | 1d → 4.8d |  | 54.16d → 0d | baseline start none → 2026-07-09; baseline finish none → 2026-07-10 |
| 342 | Setup Nginx na produkcji | 2026-07-10 → 2027-02-21 (+226d) | 2026-07-11 → 2027-02-24 (+228d) | 1d → 3.2d |  | 54.16d → 0d | baseline start none → 2026-07-10; baseline finish none → 2026-07-11 |
| 343 | Setup CI/CD: Auto-deploy do staging | 2026-07-11 → 2027-02-24 (+228d) | 2026-07-12 → 2027-03-01 (+232d) | 1d → 4.8d |  | 54.16d → 0d | baseline start none → 2026-07-11; baseline finish none → 2026-07-12 |
| 344 | Migracja bazy danych na staging | 2026-07-12 → 2027-03-01 (+232d) | 2026-07-13 → 2027-03-04 (+234d) | 1d → 3.2d |  | 54.16d → 0d | baseline start none → 2026-07-12; baseline finish none → 2026-07-13 |
| 345 | Testy akceptacyjne z użytkownikami (UAT) | 2026-07-13 → 2027-03-04 (+234d) | 2026-07-14 → 2027-03-12 (+241d) | 1d → 8d |  | 54.16d → 0d | baseline start none → 2026-07-13; baseline finish none → 2026-07-14 |
| 346 | Bug fixing na podstawie feedbacku | 2026-07-14 → 2027-03-12 (+241d) | 2026-07-15 → 2027-03-20 (+248d) | 1d → 8d |  | 54.16d → 0d | baseline start none → 2026-07-14; baseline finish none → 2026-07-15 |
| 347 | **Wdrożenie Produkcyjne** | 2026-07-15 → 2027-03-20 (+248d) | 2026-07-25 → 2027-04-21 (+270d) | 10d → 32d |  | 54.16d → 0d | baseline start none → 2026-07-15; baseline finish none → 2026-07-25 |
| 348 | Konfiguracja domeny produkcyjnej (blatyrpg.pl) | 2026-07-15 → 2027-03-20 (+248d) | 2026-07-16 → 2027-03-23 (+250d) | 1d → 3.2d |  | 54.16d → 0d | baseline start none → 2026-07-15; baseline finish none → 2026-07-16 |
| 349 | Setup serwera produkcyjnego | 2026-07-16 → 2027-03-23 (+250d) | 2026-07-17 → 2027-03-28 (+254d) | 1d → 4.8d |  | 54.16d → 0d | baseline start none → 2026-07-16; baseline finish none → 2026-07-17 |
| 350 | Konfiguracja Backupów bazy danych | 2026-07-17 → 2027-03-28 (+254d) | 2026-07-18 → 2027-03-31 (+256d) | 1d → 3.2d |  | 54.16d → 0d | baseline start none → 2026-07-17; baseline finish none → 2026-07-18 |

| ID | Task | Start | Finish | Duration | Total float | Other |
| --- | --- | --- | --- | --- | --- | --- |
| 351 | Setup Monitoring: Sentry (error tracking) | 2026-07-18 → 2027-03-31 (+256d) | 2026-07-19 → 2027-04-03 (+258d) | 1d → 3.2d | 54.16d → 0d | baseline start none → 2026-07-18; baseline finish none → 2026-07-19 |
| 352 | Setup Monitoring: Grafana + Prometheus | 2026-07-19 → 2027-04-04 (+259d) | 2026-07-20 → 2027-04-08 (+262d) | 1d → 4.8d | 54.16d → 0d | baseline start none → 2026-07-19; baseline finish none → 2026-07-20 |
| 353 | Setup Logowania: ELK Stack (opcjonalnie) | 2026-07-20 → 2027-04-08 (+262d) | 2026-07-21 → 2027-04-11 (+264d) | 1d → 3.2d | 54.16d → 0d | baseline start none → 2026-07-20; baseline finish none → 2026-07-21 |
| 354 | Konfiguracja CDN (Cloudflare) | 2026-07-21 → 2027-04-12 (+265d) | 2026-07-22 → 2027-04-13 (+265d) | 1d → 1.6d | 54.16d → 0d | baseline start none → 2026-07-21; baseline finish none → 2026-07-22 |
| 355 | Migracja danych z staging na produkcję | 2026-07-22 → 2027-04-13 (+265d) | 2026-07-23 → 2027-04-16 (+267d) | 1d → 3.2d | 54.16d → 0d | baseline start none → 2026-07-22; baseline finish none → 2026-07-23 |
| 356 | Deploy aplikacji na produkcję | 2026-07-23 → 2027-04-16 (+267d) | 2026-07-24 → 2027-04-19 (+269d) | 1d → 3.2d | 54.16d → 0d | baseline start none → 2026-07-23; baseline finish none → 2026-07-24 |
| 357 | Smoke Tests po wdrożeniu | 2026-07-24 → 2027-04-20 (+270d) | 2026-07-25 → 2027-04-21 (+270d) | 1d → 1.6d | 54.16d → 0d | baseline start none → 2026-07-24; baseline finish none → 2026-07-25 |
| 358 | **Utrzymanie i Maintenance** | 2026-07-25 → 2027-04-21 (+270d) | 2026-07-29 → 2027-05-08 (+283d) | 4d → 16.8d | 54.16d → 0d | baseline start none → 2026-07-25; baseline finish none → 2026-07-29 |
| 359 | Plan Disaster Recovery | 2026-07-25 → 2027-04-21 (+270d) | 2026-07-26 → 2027-04-24 (+272d) | 1d → 3.2d | 54.16d → 0d | baseline start none → 2026-07-25; baseline finish none → 2026-07-26 |
| 360 | Harmonogram aktualizacji zależności | 2026-07-26 → 2027-04-24 (+272d) | 2026-07-27 → 2027-04-26 (+273d) | 1d → 1.6d | 54.16d → 0d | baseline start none → 2026-07-26; baseline finish none → 2026-07-27 |
| 361 | Monitoring wydajności i kosztów | 2026-07-27 → 2027-04-26 (+273d) | 2026-07-28 → 2027-04-30 (+276d) | 1d → 4d | 54.16d → 0d | baseline start none → 2026-07-27; baseline finish none → 2026-07-28 |
| 362 | Feedback Loop z użytkownikami | 2026-07-28 → 2027-04-30 (+276d) | 2026-07-29 → 2027-05-08 (+283d) | 1d → 8d | 54.16d → 0d | baseline start none → 2026-07-28; baseline finish none → 2026-07-29 |
